# CC-01_BCR-SIG-001_20160525 - Sprint 3

Schedule from MS Project, 2016-03-15 to 2016-10-05, A marks actual dates.

## Calendars

- Standard: Mon-Fri 08:00-12:00, 13:00-17:00; Sat-Sun off. Exceptions (off unless hours are given): 2016-03-24 to 2016-03-25 (Jueves y viernes Santo), 2016-04-11 (Feriado Batalla de Rivas), 2016-05-01 (Día del Trabajador), 2016-07-25 (Anexión Guanacaste), 2016-08-02 (Virgen de Los Angeles), 2016-08-15 (Día de la Madre).

## Resources

| Resource |
| --- |
| Stephanie Barahona - GMAS |
| Gabriela Dittel - GMAS |
| Ulises Rivera - GMAS |
| Arnoldo Martinelli - GMAS |
| Equipo Negocio - BCR |
| Equipo TI - BCR |
| Equipo QA - BCR |
| Alexander Cruz - GMAS |
| Usuarios Funcionales - BCR |
| Vladimir Guzmán - GMAS |
| Mario Murillo - GMAS |
| Cesar Loaiza - GMAS |

## Schedule

| ID | WBS | Task | Type | Duration | Start | Finish | Predecessors | Complete | Remaining | Baseline start | Baseline finish | Baseline duration | Baseline 1 start | Baseline 1 finish | Total slack | Constraint | Resources | Work | Actual work |
| --- | --- | --- | --- | --- | --- | --- | --- | --- | --- | --- | --- | --- | --- | --- | --- | --- | --- | --- | --- |
| 1 | 1 | **SIGANEM Bloque 01 - Fase 02 - Sprint 3 tiquete 2016022310547679** |  | 140.16d | 2016-03-15 08:00 A | 2016-10-05 09:15 |  | 76% | 33.65d | 2016-03-15 08:00 | 2016-08-09 13:42 | 99.59d | 2016-03-15 08:00 | 2016-08-26 15:42 | 0d |  |  | 1594.16h | 1364.66h |
| 2 | 1.1 | Preparación de Propuesta y Plan de Trabajo |  | 5d | 2016-03-15 08:00 A | 2016-03-21 17:00 A |  | 100% |  | 2016-03-15 08:00 | 2016-03-21 17:00 | 5d | 2016-03-15 08:00 | 2016-03-21 17:00 |  | start no earlier than 2016-03-15 08:00 | Stephanie Barahona - GMAS [50%]; Gabriela Dittel - GMAS; Alexander Cruz - GMAS [10%]; Vladimir Guzmán - GMAS [80%]; Ulises Rivera - GMAS [39.4%] | 32.3h | 32.3h |
| 3 | 1.2 | **Requerimientos Sprint 3** |  | 133.91d | 2016-03-23 10:00 A | 2016-10-05 09:15 |  | 75% | 32.88d | 2016-03-23 10:00 | 2016-08-09 13:42 | 93.34d | 2016-03-23 10:00 | 2016-08-26 15:42 | 0d |  |  | 1462.36h | 1261.36h |
| 4 | 1.2.1 | **Análisis Requisitos del Sistema** |  | 0.75d | 2016-03-23 10:00 A | 2016-03-23 17:00 A |  | 100% |  | 2016-03-23 10:00 | 2016-03-23 17:00 | 0.75d | 2016-03-23 10:00 | 2016-03-23 17:00 |  |  |  | 18h | 18h |
| 5 | 1.2.1.1 | Validar y Evaluar Detalle los Requisitos del Sistema (RFP) |  | 0.75d | 2016-03-23 10:00 A | 2016-03-23 17:00 A | 2FS+1.25d | 100% |  | 2016-03-23 10:00 | 2016-03-23 17:00 | 0.75d | 2016-03-23 10:00 | 2016-03-23 17:00 |  |  | Stephanie Barahona - GMAS; Ulises Rivera - GMAS; Alexander Cruz - GMAS | 18h | 18h |
| 6 | 1.2.2 | **Diseño** |  | 60d | 2016-03-30 08:00 A | 2016-06-22 17:00 A |  | 100% |  | 2016-03-30 08:00 | 2016-06-22 17:00 | 59d | 2016-03-30 08:00 | 2016-06-22 17:00 |  |  |  | 292h | 292h |
| 7 | 1.2.2.1 | **Funcional** |  | 14.75d | 2016-03-30 08:00 A | 2016-04-20 15:00 A |  | 100% |  | 2016-03-30 08:00 | 2016-04-20 15:00 | 14.75d | 2016-03-30 08:00 | 2016-04-20 15:00 |  |  |  | 160h | 160h |
| 8 | 1.2.2.1.1 | **Definición Propuesta Diseño** |  | 10.25d | 2016-03-30 08:00 A | 2016-04-14 10:00 A | 4FS+2d | 100% |  | 2016-03-30 08:00 | 2016-04-14 10:00 | 10.25d | 2016-03-30 08:00 | 2016-04-14 10:00 |  |  |  | 96h | 96h |
| 9 | 1.2.2.1.1.1 | Requerimiento Cálculos Monto Mitigador y Porcentaje Aceptación - Garantías Fideicometidas |  | 4d | 2016-03-30 08:00 A | 2016-04-04 17:00 A |  | 100% |  | 2016-03-30 08:00 | 2016-04-04 17:00 | 4d | 2016-03-30 08:00 | 2016-04-04 17:00 |  |  | Stephanie Barahona - GMAS [50%]; Equipo TI - BCR [50%] | 32h | 32h |
| 10 | 1.2.2.1.1.2 | Requerimiento Adición de Procesos - Garantías Fideicometidas |  | 1d | 2016-04-05 08:00 A | 2016-04-05 17:00 A | 9 | 100% |  | 2016-04-05 08:00 | 2016-04-05 17:00 | 1d | 2016-04-05 08:00 | 2016-04-05 17:00 |  |  | Stephanie Barahona - GMAS [50%]; Equipo TI - BCR [50%] | 12h | 12h |
| 11 | 1.2.2.1.1.3 | Requerimiento Garantías Operaciones – Garantías Fideicomisos Y Avales |  | 3.5d | 2016-04-06 08:00 A | 2016-04-12 12:00 A | 10 | 100% |  | 2016-04-06 08:00 | 2016-04-12 12:00 | 3.5d | 2016-04-06 08:00 | 2016-04-12 12:00 |  |  | Equipo TI - BCR [50%]; Stephanie Barahona - GMAS [50%] | 28h | 28h |
| 12 | 1.2.2.1.1.4 | Requerimiento Cálculos Porcentaje Responsabilidad - Garantías Fideicomiso y Avales |  | 1.25d | 2016-04-12 13:00 A | 2016-04-13 15:00 A | 11 | 100% |  | 2016-04-12 13:00 | 2016-04-13 15:00 | 1.25d | 2016-04-12 13:00 | 2016-04-13 15:00 |  |  | Equipo TI - BCR; Stephanie Barahona - GMAS | 20h | 20h |
| 13 | 1.2.2.1.1.5 | Imágenes prototipo |  | 0.5d | 2016-04-13 15:00 A | 2016-04-14 10:00 A | 12 | 100% |  | 2016-04-13 15:00 | 2016-04-14 10:00 | 0.5d | 2016-04-13 15:00 | 2016-04-14 10:00 |  |  | Stephanie Barahona - GMAS | 4h | 4h |
| 14 | 1.2.2.1.1.6 | Entrega documento diseño | milestone | 0d | 2016-04-14 10:00 A | 2016-04-14 10:00 A | 13 | 100% |  | 2016-04-14 10:00 | 2016-04-14 10:00 |  | 2016-04-14 10:00 | 2016-04-14 10:00 |  |  | Stephanie Barahona - GMAS |  |  |
| 15 | 1.2.2.1.2 | Revisión de propuesta con área de negocio |  | 1.5d | 2016-04-14 10:00 A | 2016-04-15 15:00 A | 8 | 100% |  | 2016-04-14 10:00 | 2016-04-15 15:00 | 1.5d | 2016-04-14 10:00 | 2016-04-15 15:00 |  |  | Equipo Negocio - BCR; Equipo TI - BCR | 24h | 24h |
| 16 | 1.2.2.1.3 | Ajustes Documento de diseño |  | 1.5d | 2016-04-15 15:00 A | 2016-04-19 10:00 A | 15 | 100% |  | 2016-04-15 15:00 | 2016-04-19 10:00 | 1.5d | 2016-04-15 15:00 | 2016-04-19 10:00 |  |  | Stephanie Barahona - GMAS | 12h | 12h |
| 17 | 1.2.2.1.4 | Entrega documento diseño final | milestone | 0d | 2016-04-19 10:00 A | 2016-04-19 10:00 A | 16 | 100% |  | 2016-04-19 10:00 | 2016-04-19 10:00 |  | 2016-04-19 10:00 | 2016-04-19 10:00 |  |  | Stephanie Barahona - GMAS |  |  |
| 18 | 1.2.2.1.5 | Revisión Final Area Negocio |  | 1d | 2016-04-19 10:00 A | 2016-04-20 10:00 A | 17 | 100% |  | 2016-04-19 10:00 | 2016-04-20 10:00 | 1d | 2016-04-19 10:00 | 2016-04-20 10:00 |  |  | Equipo Negocio - BCR; Equipo QA - BCR | 16h | 16h |
| 19 | 1.2.2.1.6 | Revisión Final TI |  | 1d | 2016-04-19 10:00 A | 2016-04-20 10:00 A | 17 | 100% |  | 2016-04-19 10:00 | 2016-04-20 10:00 | 1d | 2016-04-19 10:00 | 2016-04-20 10:00 |  |  | Equipo TI - BCR | 8h | 8h |
| 20 | 1.2.2.1.7 | Ajustes por Revisión |  | 0.5d | 2016-04-20 10:00 A | 2016-04-20 15:00 A | 18, 19 | 100% |  | 2016-04-20 10:00 | 2016-04-20 15:00 | 0.5d | 2016-04-20 10:00 | 2016-04-20 15:00 |  |  | Stephanie Barahona - GMAS | 4h | 4h |
| 21 | 1.2.2.1.8 | Aprobación Diseño Funcional | milestone | 0d | 2016-04-20 15:00 A | 2016-04-20 15:00 A | 20 | 100% |  | 2016-04-20 15:00 | 2016-04-20 15:00 |  | 2016-04-20 15:00 | 2016-04-20 15:00 |  |  | Equipo Negocio - BCR; Equipo QA - BCR; Equipo TI - BCR; Gabriela Dittel - GMAS; Stephanie Barahona - GMAS |  |  |
| 22 | 1.2.2.2 | **Técnico (Control de cambios CC1 al 9 junio 2016)** |  | 8d | 2016-06-13 08:00 A | 2016-06-22 17:00 A |  | 100% |  | 2016-06-13 08:00 | 2016-06-22 17:00 | 8d | 2016-06-13 08:00 | 2016-06-22 17:00 |  |  |  | 132h | 132h |
| 23 | 1.2.2.2.1 | **Definición Propuesta Diseño** |  | 6d | 2016-06-13 08:00 A | 2016-06-20 17:00 A | 7 | 100% |  | 2016-06-13 08:00 | 2016-06-20 17:00 | 6d | 2016-06-13 08:00 | 2016-06-20 17:00 |  |  |  | 108h | 108h |
| 24 | 1.2.2.2.1.1 | Requerimiento Cálculos Monto Mitigador y Porcentaje Aceptación - Garantías Fideicometidas |  | 2d | 2016-06-13 08:00 A | 2016-06-14 17:00 A |  | 100% |  | 2016-06-13 08:00 | 2016-06-14 17:00 | 2d | 2016-06-13 08:00 | 2016-06-14 17:00 |  | start no earlier than 2016-06-13 08:00 | Equipo TI - BCR; Alexander Cruz - GMAS | 32h | 32h |
| 25 | 1.2.2.2.1.2 | Requerimiento Adición de Procesos - Garantías Fideicometidas |  | 2d | 2016-06-15 08:00 A | 2016-06-16 17:00 A | 24 | 100% |  | 2016-06-15 08:00 | 2016-06-16 17:00 | 2d | 2016-06-15 08:00 | 2016-06-16 17:00 |  |  | Equipo TI - BCR; Alexander Cruz - GMAS | 32h | 32h |
| 26 | 1.2.2.2.1.3 | Requerimiento Garantías Operaciones – Garantías Fideicomisos Y Avales |  | 1.5d | 2016-06-17 08:00 A | 2016-06-20 12:00 A | 25 | 100% |  | 2016-06-17 08:00 | 2016-06-20 12:00 | 1.5d | 2016-06-17 08:00 | 2016-06-20 12:00 |  |  | Equipo TI - BCR; Alexander Cruz - GMAS; Cesar Loaiza - GMAS | 36h | 36h |
| 27 | 1.2.2.2.1.4 | Requerimiento Cálculos Porcentaje Responsabilidad - Garantías Fideicomiso y Avales |  | 0.5d | 2016-06-20 13:00 A | 2016-06-20 17:00 A | 26 | 100% |  | 2016-06-20 13:00 | 2016-06-20 17:00 | 0.5d | 2016-06-20 13:00 | 2016-06-20 17:00 |  |  | Equipo TI - BCR; Alexander Cruz - GMAS | 8h | 8h |
| 28 | 1.2.2.2.2 | Entrega Propuesta | milestone | 0d | 2016-06-20 17:00 A | 2016-06-20 17:00 A | 23 | 100% |  | 2016-06-20 17:00 | 2016-06-20 17:00 |  | 2016-06-20 17:00 | 2016-06-20 17:00 |  |  | Alexander Cruz - GMAS; Cesar Loaiza - GMAS |  |  |
| 29 | 1.2.2.2.3 | Revisión TI |  | 1d | 2016-06-21 08:00 A | 2016-06-21 17:00 A | 28 | 100% |  | 2016-06-21 08:00 | 2016-06-21 17:00 | 1d | 2016-06-21 08:00 | 2016-06-21 17:00 |  |  | Equipo TI - BCR | 8h | 8h |
| 30 | 1.2.2.2.4 | Ajustes por revisión |  | 1d | 2016-06-22 08:00 A | 2016-06-22 17:00 A | 29 | 100% |  | 2016-06-22 08:00 | 2016-06-22 17:00 | 1d | 2016-06-22 08:00 | 2016-06-22 17:00 |  |  | Alexander Cruz - GMAS; Cesar Loaiza - GMAS | 16h | 16h |
| 31 | 1.2.2.2.5 | Aprobación Apartado Técnico | milestone | 0d | 2016-06-22 17:00 A | 2016-06-22 17:00 A | 30 | 100% |  | 2016-06-22 17:00 | 2016-06-22 17:00 |  | 2016-06-22 17:00 | 2016-06-22 17:00 |  |  | Equipo TI - BCR; Gabriela Dittel - GMAS; Alexander Cruz - GMAS; Cesar Loaiza - GMAS |  |  |

Notes:
- 2: Contempla medio día invertido en la reunión de metodología que tuve y luego la que se realizó con Luis

| ID | WBS | Task | Duration | Start | Finish | Predecessors | Complete | Baseline start | Baseline finish | Baseline duration | Baseline 1 start | Baseline 1 finish | Constraint | Resources | Work | Actual work |
| --- | --- | --- | --- | --- | --- | --- | --- | --- | --- | --- | --- | --- | --- | --- | --- | --- |
| 32 | 1.2.3 | **Desarrollo y pruebas internas de programación** | 28.19d | 2016-06-23 08:00 A | 2016-08-04 09:33 A | 6 | 100% | 2016-06-23 08:00 | 2016-07-21 10:00 | 20.25d | 2016-06-23 08:00 | 2016-07-21 10:00 |  |  | 644.66h | 644.66h |
| 33 | 1.2.3.1 | Validación de requerimientos técnicos para BD | 0.25d | 2016-06-23 08:00 A | 2016-06-23 10:00 A |  | 100% | 2016-06-23 08:00 | 2016-06-23 10:00 | 0.25d | 2016-06-23 08:00 | 2016-06-23 10:00 |  | Arnoldo Martinelli - GMAS; Stephanie Barahona - GMAS; Alexander Cruz - GMAS | 6h | 6h |
| 34 | 1.2.3.2 | Requerimiento Garantías Operaciones – Garantías Fideicomisos Y Avales | 11d | 2016-06-27 10:00 A | 2016-07-12 10:00 A | 33FS+2d | 100% | 2016-06-23 10:00 | 2016-07-07 10:00 | 10d | 2016-06-23 10:00 | 2016-07-07 10:00 |  | Mario Murillo - GMAS [90%]; Cesar Loaiza - GMAS [90%]; Arnoldo Martinelli - GMAS [90%]; Alexander Cruz - GMAS [25%]; Ulises Rivera - GMAS [25%] | 281.6h | 281.6h |
| 35 | 1.2.3.3 | **Control de cambios CC4 al 14 julio 2016** | 4.44d | 2016-07-12 10:00 A | 2016-07-18 14:33 A |  | 100% |  |  |  |  |  |  |  | 102h | 102h |
| 36 | 1.2.3.3.1 | Preparación control de cambios (correos, coordinación, ajuste cronograma, ajuste controles de horas) | 2.5d | 2016-07-14 08:00 A | 2016-07-18 12:00 A |  | 100% |  |  |  |  |  | start no earlier than 2016-07-14 08:00 | Gabriela Dittel - GMAS; Arnoldo Martinelli - GMAS [20%]; Stephanie Barahona - GMAS [10%] | 6h | 6h |
| 37 | 1.2.3.3.2 | Días de espera por Problemas SICC | 4.44d | 2016-07-12 10:00 A | 2016-07-18 14:33 A | 34 | 100% |  |  |  |  |  |  | Arnoldo Martinelli - GMAS [90%]; Cesar Loaiza - GMAS [90%]; Mario Murillo - GMAS [90%] | 96h | 96h |
| 38 | 1.2.3.4 | **Control de Cambios CC3 al 7 de julio 2016** | 7.38d | 2016-07-06 08:00 A | 2016-07-15 11:00 A |  | 100% |  |  |  |  |  |  |  | 7.8h | 7.8h |
| 39 | 1.2.3.4.1 | Preparación control de cambios (analisis, ajuste cronograma ajuste controles de horas) | 3h | 2016-07-06 08:00 A | 2016-07-06 11:00 A |  | 100% |  |  |  |  |  |  | Alexander Cruz - GMAS [50%]; Gabriela Dittel - GMAS; Stephanie Barahona - GMAS [10%] | 4.8h | 4.8h |
| 40 | 1.2.3.4.2 | Ajuste en diseño funcional y en Excel de cálculos | 3h | 2016-07-15 08:00 A | 2016-07-15 11:00 A |  | 100% |  |  |  |  |  | start no earlier than 2016-07-15 08:00 | Stephanie Barahona - GMAS | 3h | 3h |
| 41 | 1.2.3.5 | Requerimiento Cálculos Monto Mitigador y Porcentaje Aceptación - Garantías Fideicometidas | 4.5d | 2016-07-18 14:33 A | 2016-07-26 09:33 A | 35 | 100% | 2016-07-07 10:00 | 2016-07-13 10:00 | 4d | 2016-07-07 10:00 | 2016-07-13 10:00 |  | Mario Murillo - GMAS [90%]; Cesar Loaiza - GMAS [90%]; Arnoldo Martinelli - GMAS [90%]; Alexander Cruz - GMAS [25%]; Ulises Rivera - GMAS [25%] | 115.2h | 115.2h |
| 42 | 1.2.3.6 | Requerimiento Adición de Procesos - Garantías Fideicometidas | 2d | 2016-07-26 09:33 A | 2016-07-28 09:33 A | 41 | 100% | 2016-07-13 10:00 | 2016-07-15 10:00 | 2d | 2016-07-13 10:00 | 2016-07-15 10:00 |  | Ulises Rivera - GMAS [25%]; Mario Murillo - GMAS [90%]; Cesar Loaiza - GMAS [90%]; Arnoldo Martinelli - GMAS [90%]; Alexander Cruz - GMAS [25%] | 48.4h | 48.4h |
| 43 | 1.2.3.7 | Requerimiento Cálculos Porcentaje Responsabilidad - Garantías Fideicomiso y Avales | 4d | 2016-07-28 09:33 A | 2016-08-04 09:33 A | 42 | 100% | 2016-07-15 10:00 | 2016-07-21 10:00 | 4d | 2016-07-15 10:00 | 2016-07-21 10:00 |  | Ulises Rivera - GMAS [25%]; Mario Murillo - GMAS [90%]; Cesar Loaiza - GMAS [90%]; Arnoldo Martinelli - GMAS [90%]; Alexander Cruz - GMAS [25%] | 83.66h | 83.66h |
| 44 | 1.2.4 | **Control de Cambios CC2 al 20 junio 2016** | 23.94d | 2016-07-04 10:00 A | 2016-08-09 09:33 A |  | 100% |  |  |  | 2016-06-30 10:00 | 2016-07-26 10:00 |  |  | 134.7h | 134.7h |
| 45 | 1.2.4.1 | **Pruebas Técnicas Internas Funcionales** | 23.94d | 2016-07-04 10:00 A | 2016-08-09 09:33 A |  | 100% |  |  |  | 2016-06-30 10:00 | 2016-07-26 10:00 |  |  | 134.7h | 134.7h |
| 46 | 1.2.4.1.1 | Creación de Script de Pruebas | 4d | 2016-07-04 10:00 A | 2016-07-08 10:00 A | 33FS+7d | 100% |  |  |  | 2016-06-30 10:00 | 2016-07-06 10:00 |  | Stephanie Barahona - GMAS | 32h | 32h |
| 47 | 1.2.4.1.2 | **Requerimiento Garantías Operaciones – Garantías Fideicomisos Y Avales** | 5d | 2016-07-18 14:33 A | 2016-07-26 14:33 A | 35 | 100% |  |  |  | 2016-07-07 10:00 | 2016-07-12 10:00 |  |  | 54h | 54h |
| 48 | 1.2.4.1.2.1 | Ejecución de Pruebas y Documentación | 2.5d | 2016-07-18 14:33 A | 2016-07-21 09:33 A |  | 100% |  |  |  | 2016-07-07 10:00 | 2016-07-12 10:00 |  | Stephanie Barahona - GMAS | 20h | 20h |
| 49 | 1.2.4.1.2.2 | Ajustes s/Pruebas | 2.5d | 2016-07-18 14:33 A | 2016-07-21 09:33 A | 35 | 100% |  |  |  | 2016-07-07 10:00 | 2016-07-12 10:00 |  | Cesar Loaiza - GMAS [10%]; Mario Murillo - GMAS [10%]; Arnoldo Martinelli - GMAS [10%] | 6h | 6h |
| 50 | 1.2.4.1.2.3 | **Control de cambios CC5 al 27 julio 2016** | 2d | 2016-07-21 09:33 A | 2016-07-26 09:33 A | 48 | 100% |  |  |  |  |  |  |  | 16h | 16h |
| 51 | 1.2.4.1.2.3.1 | Días de espera por Problemas SICC | 2d | 2016-07-21 09:33 A | 2016-07-26 09:33 A |  | 100% |  |  |  |  |  |  | Stephanie Barahona - GMAS | 16h | 16h |
| 52 | 1.2.4.1.2.4 | Ejecución de Pruebas y Documentación | 0.5d | 2016-07-26 09:33 A | 2016-07-26 14:33 A | 50 | 100% |  |  |  |  |  |  | Stephanie Barahona - GMAS | 4h | 4h |
| 53 | 1.2.4.1.2.5 | Ajustes s/Pruebas | 0.5d | 2016-07-26 09:33 A | 2016-07-26 14:33 A | 50 | 100% |  |  |  |  |  |  | Arnoldo Martinelli - GMAS; Mario Murillo - GMAS | 8h | 8h |
| 54 | 1.2.4.1.3 | **Requerimiento Cálculos Monto Mitigador y Porcentaje Aceptación - Garantías Fideicometidas** | 7.69d | 2016-07-19 10:00 A | 2016-07-29 16:33 A | 38, 47 | 100% |  |  |  | 2016-07-13 10:00 | 2016-07-15 10:00 |  |  | 22.7h | 22.7h |
| 55 | 1.2.4.1.3.1 | **Control de Cambios CC3 al 7 de julio 2016** | 0.25d | 2016-07-19 10:00 A | 2016-07-19 12:00 A |  | 100% |  |  |  |  |  |  |  | 2h | 2h |
| 56 | 1.2.4.1.3.1.1 | Ajuste en documento Script de pruebas | 2h | 2016-07-19 10:00 A | 2016-07-19 12:00 A | 38 | 100% |  |  |  |  |  |  | Stephanie Barahona - GMAS | 2h | 2h |
| 57 | 1.2.4.1.3.2 | Ejecución de Pruebas y Documentación | 18h | 2016-07-27 14:33 A | 2016-07-29 16:33 A | 41FS+1d, 47FS+1d | 100% |  |  |  | 2016-07-13 10:00 | 2016-07-15 10:00 |  | Stephanie Barahona - GMAS | 18h | 18h |
| 58 | 1.2.4.1.3.3 | Ajustes s/Pruebas | 18h | 2016-07-27 14:33 A | 2016-07-29 16:33 A | 41FS+1d, 47FS+1d | 100% |  |  |  | 2016-07-13 10:00 | 2016-07-15 10:00 |  | Cesar Loaiza - GMAS [5%]; Mario Murillo - GMAS [5%]; Arnoldo Martinelli - GMAS [5%] | 2.7h | 2.7h |

Notes:
- 34: CC3: El 7 junio 2016 se corre fecha de inicio de desarollo por atención del equipo de trabajo al pase de producción. Se incluye además un día adicional a la tarea 34 por el atarso presentdo en la programación por problemas con el SICC entre los días 27 y 29 de junio.
- 35: CC4: El 14 julio 2016 se hace nuevo control de cambios para considerar un nuevo atraso por problemas del SICC. El problema se inicia desde el 6 de junio en la tarde y se resuelve hasta el 13 de julio a las 9:48 am. Esta situación impactó terminar el desarrollo del requerimiento y la ejecución de las pruebas funcionales del mismo.
- 38: CC3: Por solcitud del usuario se realiza un cambio en la fórmula de monto mitigador
- 41: Para el ajuste en el monto mitigador (control de cambios al 7 de junio 2016 se incluyen 5 horas más en desarrollo que considera: modificación de las tablas temporales actuales para que almacenen el nuevo porcentaje necesario para el cálculo del monto mitigador, ajustar los procedimientos almacenados utilizados en este cálculo y ajustar la paquetería de integration services relacionada .
- 57: En control de cambios del 7 d ejulio 2016 se incluyen 2 horas más en c pruebas, pues es necesario realziar pruebas con valores dados en porcentaje de responsabilidad.

| ID | WBS | Task | Duration | Start | Finish | Predecessors | Complete | Remaining | Baseline start | Baseline finish | Baseline duration | Baseline 1 start | Baseline 1 finish | Total slack | Resources | Work | Actual work |
| --- | --- | --- | --- | --- | --- | --- | --- | --- | --- | --- | --- | --- | --- | --- | --- | --- | --- |
| 59 | 1.2.4.1.4 | **Requerimiento Adición de Procesos - Garantías Fideicometidas** | 0.5d | 2016-08-01 16:33 A | 2016-08-03 11:33 A | 42FS+1d, 54FS+1d | 100% |  |  |  |  | 2016-07-15 10:00 | 2016-07-15 15:00 |  |  | 5.2h | 5.2h |
| 60 | 1.2.4.1.4.1 | Ejecución de Pruebas y Documentación | 0.5d | 2016-08-01 16:33 A | 2016-08-03 11:33 A |  | 100% |  |  |  |  | 2016-07-15 10:00 | 2016-07-15 15:00 |  | Stephanie Barahona - GMAS | 4h | 4h |
| 61 | 1.2.4.1.4.2 | Ajustes s/Pruebas | 0.5d | 2016-08-01 16:33 A | 2016-08-03 11:33 A | 42FS+1d, 54FS+1d | 100% |  |  |  |  | 2016-07-15 10:00 | 2016-07-15 15:00 |  | Cesar Loaiza - GMAS [10%]; Mario Murillo - GMAS [10%]; Arnoldo Martinelli - GMAS [10%] | 1.2h | 1.2h |
| 62 | 1.2.4.1.5 | **Requerimiento Cálculos Porcentaje Responsabilidad - Garantías Fideicomiso y Avales** | 2d | 2016-08-05 09:33 A | 2016-08-09 09:33 A | 43FS+1d, 59FS+1d | 100% |  |  |  |  | 2016-07-21 10:00 | 2016-07-26 10:00 |  |  | 20.8h | 20.8h |
| 63 | 1.2.4.1.5.1 | Ejecución de Pruebas y Documentación | 2d | 2016-08-05 09:33 A | 2016-08-09 09:33 A |  | 100% |  |  |  |  | 2016-07-21 10:00 | 2016-07-26 10:00 |  | Stephanie Barahona - GMAS | 16h | 16h |
| 64 | 1.2.4.1.5.2 | Ajustes s/Pruebas | 2d | 2016-08-05 09:33 A | 2016-08-09 09:33 A | 43FS+1d, 59FS+1d | 100% |  |  |  |  | 2016-07-21 10:00 | 2016-07-26 10:00 |  | Cesar Loaiza - GMAS [10%]; Mario Murillo - GMAS [10%]; Arnoldo Martinelli - GMAS [10%] | 4.8h | 4.8h |
| 65 | 1.2.5 | **Pruebas de QA** | 51.19d | 2016-06-27 10:00 A | 2016-09-09 11:33 |  | 93% | 3.66d | 2016-06-23 08:00 | 2016-07-26 16:00 | 22.88d | 2016-06-27 10:00 | 2016-08-01 09:00 | 0d |  | 198h | 172h |
| 66 | 1.2.5.1 | Generación de Scripts de Pruebas | 10d | 2016-06-27 10:00 A | 2016-07-11 10:00 A | 33FS+2d | 100% |  | 2016-06-23 08:00 | 2016-07-06 17:00 | 10d | 2016-06-27 10:00 | 2016-07-11 10:00 |  | Equipo QA - BCR | 80h | 80h |
| 67 | 1.2.5.2 | **Requerimiento Garantías Operaciones – Garantías Fideicomisos Y Avales** | 7.62d | 2016-07-26 14:33 A | 2016-08-08 10:33 A | 47, 66 | 100% |  | 2016-07-07 10:00 | 2016-07-11 16:00 | 2.62d | 2016-07-12 10:00 | 2016-07-14 16:00 |  |  | 18.6h | 18.6h |
| 68 | 1.2.5.2.1 | Generacion de Pase | 5h | 2016-07-26 14:33 A | 2016-07-27 10:33 A |  | 100% |  | 2016-07-07 10:00 | 2016-07-07 16:00 | 5h | 2016-07-12 10:00 | 2016-07-12 16:00 |  | Cesar Loaiza - GMAS [10%]; Equipo TI - BCR [10%] | 1h | 1h |
| 69 | 1.2.5.2.2 | Aplicación de Pruebas (CC5: ajuste fechas al 27 de julio) | 2d | 2016-08-04 10:33 A | 2016-08-08 10:33 A | 68FS+5d | 100% |  | 2016-07-07 16:00 | 2016-07-11 16:00 | 2d | 2016-07-12 16:00 | 2016-07-14 16:00 |  | Equipo QA - BCR | 16h | 16h |
| 70 | 1.2.5.2.3 | Ajustes sobre PNS | 2d | 2016-08-04 10:33 A | 2016-08-08 10:33 A | 68FS+5d | 100% |  | 2016-07-07 16:00 | 2016-07-11 16:00 | 2d | 2016-07-12 16:00 | 2016-07-14 16:00 |  | Mario Murillo - GMAS [5%]; Cesar Loaiza - GMAS [5%] | 1.6h | 1.6h |
| 71 | 1.2.5.3 | **Requerimiento Cálculos Monto Mitigador y Porcentaje Aceptación - Garantías Fideicometidas** | 16.62d | 2016-08-08 10:33 A | 2016-08-31 16:33 A |  | 100% |  | 2016-07-13 10:00 | 2016-07-18 16:00 | 3.62d | 2016-07-15 10:00 | 2016-07-20 16:00 |  |  | 27.4h | 27.4h |
| 72 | 1.2.5.3.1 | Generacion de Pase | 5h | 2016-08-08 10:33 A | 2016-08-08 16:33 A | 67 | 100% |  | 2016-07-13 10:00 | 2016-07-13 16:00 | 5h | 2016-07-15 10:00 | 2016-07-15 16:00 |  | Cesar Loaiza - GMAS [10%]; Equipo TI - BCR [10%] | 1h | 1h |
| 73 | 1.2.5.3.2 | Aplicación de Pruebas (CC6: ajuste aplicado el 24/07/2016) | 3d | 2016-08-26 16:33 A | 2016-08-31 16:33 A | 72FS+13d | 100% |  | 2016-07-13 16:00 | 2016-07-18 16:00 | 3d | 2016-07-15 16:00 | 2016-07-20 16:00 |  | Equipo QA - BCR | 24h | 24h |
| 74 | 1.2.5.3.3 | Ajustes sobre PNS | 3d | 2016-08-26 16:33 A | 2016-08-31 16:33 A | 72FS+13d | 100% |  | 2016-07-13 16:00 | 2016-07-18 16:00 | 3d | 2016-07-15 16:00 | 2016-07-20 16:00 |  | Mario Murillo - GMAS [5%]; Cesar Loaiza - GMAS [5%] | 2.4h | 2.4h |
| 75 | 1.2.5.4 | **Requerimiento Adición de Procesos - Garantías Fideicometidas** | 16d | 2016-08-11 16:33 A | 2016-09-05 16:33 A |  | 100% |  | 2016-07-15 10:00 | 2016-07-21 16:00 | 4.62d | 2016-07-20 16:00 | 2016-07-27 12:00 |  |  | 27.4h | 27.4h |
| 76 | 1.2.5.4.1 | Generacion de Pase | 5h | 2016-08-11 16:33 A | 2016-08-12 13:33 A | 72FS+3d | 100% |  | 2016-07-15 10:00 | 2016-07-15 16:00 | 5h | 2016-07-20 16:00 | 2016-07-21 12:00 |  | Cesar Loaiza - GMAS [10%]; Equipo TI - BCR [10%] | 1h | 1h |
| 77 | 1.2.5.4.2 | Aplicación de Pruebas | 3d | 2016-08-31 16:33 A | 2016-09-05 16:33 A | 73 | 100% |  | 2016-07-18 16:00 | 2016-07-21 16:00 | 3d | 2016-07-21 13:00 | 2016-07-27 12:00 |  | Equipo QA - BCR | 24h | 24h |
| 78 | 1.2.5.4.3 | Ajustes sobre PNS | 3d | 2016-08-31 16:33 A | 2016-09-05 16:33 A | 73 | 100% |  | 2016-07-18 16:00 | 2016-07-21 16:00 | 3d | 2016-07-21 13:00 | 2016-07-27 12:00 |  | Mario Murillo - GMAS [5%]; Cesar Loaiza - GMAS [5%] | 2.4h | 2.4h |
| 79 | 1.2.5.5 | **Requerimiento Cálculos Porcentaje Responsabilidad - Garantías Fideicomiso y Avales** | 14.38d | 2016-08-18 13:33 A | 2016-09-07 16:33 A |  | 100% |  | 2016-07-21 10:00 | 2016-07-26 16:00 | 2.62d | 2016-07-27 13:00 | 2016-08-01 09:00 |  |  | 18.6h | 18.6h |
| 80 | 1.2.5.5.1 | Generacion de Pase | 5h | 2016-08-18 13:33 A | 2016-08-19 09:33 A | 76FS+3d | 100% |  | 2016-07-21 10:00 | 2016-07-21 16:00 | 5h | 2016-07-27 13:00 | 2016-07-28 09:00 |  | Cesar Loaiza - GMAS [10%]; Equipo TI - BCR [10%] | 1h | 1h |
| 81 | 1.2.5.5.2 | Aplicación de Pruebas | 2d | 2016-09-05 16:33 A | 2016-09-07 16:33 A | 77 | 100% |  | 2016-07-21 16:00 | 2016-07-26 16:00 | 2d | 2016-07-28 09:00 | 2016-08-01 09:00 |  | Equipo QA - BCR | 16h | 16h |
| 82 | 1.2.5.5.3 | Ajustes sobre PNS | 2d | 2016-09-05 16:33 A | 2016-09-07 16:33 A | 77 | 100% |  | 2016-07-21 16:00 | 2016-07-26 16:00 | 2d | 2016-07-28 09:00 | 2016-08-01 09:00 |  | Mario Murillo - GMAS [5%]; Cesar Loaiza - GMAS [5%] | 1.6h | 1.6h |

Notes:
- 69: Como parte del controld e cambios 5 se ajusta la fecha d einicio de pruebas de QA para el 4 de agosto, Esto es necesario, pues QA inició sus pruebas del Srpint 4 fuera del tiempo planificado, lo que afecta el inicio de las pruebas de sprint 3 por contarse con un sólo ambiente de pruebas.
- 73: CC6: A solicitud del banco, las fechas de pruebas de QA se trasladan hasta el 26 de agosto.

| ID | WBS | Task | Type | Duration | Start | Finish | Predecessors | Complete | Remaining | Baseline start | Baseline finish | Baseline duration | Baseline 1 start | Baseline 1 finish | Total slack | Constraint | Resources | Work | Actual work |
| --- | --- | --- | --- | --- | --- | --- | --- | --- | --- | --- | --- | --- | --- | --- | --- | --- | --- | --- | --- |
| 83 | 1.2.5.6 | **Control de cambios CC7 al 6 de setiembre de 2016: MontoMitigador_PorcentajeAceptacion** |  | 2.5d | 2016-09-06 16:33 | 2016-09-09 11:33 |  |  |  |  |  |  |  |  | 0d |  |  | 26h |  |
| 84 | 1.2.5.6.1 | Ajuste en documento de diseño |  | 0.25h | 2016-09-06 16:33 | 2016-09-06 16:48 | 78FS+1d |  |  |  |  |  |  |  | 0d |  | Arnoldo Martinelli - GMAS | 0.25h |  |
| 85 | 1.2.5.6.2 | Ajuste en programación (son dos ajustes en el cálculo del monto mitigador para garantías fideicometidas) |  | 0.5h | 2016-09-06 16:48 | 2016-09-07 08:18 | 84 |  |  |  |  |  |  |  | 0d |  | Arnoldo Martinelli - GMAS | 0.5h |  |
| 86 | 1.2.5.6.3 | Generación de casos de prueba |  | 1.25h | 2016-09-07 08:18 | 2016-09-07 09:33 | 85 |  |  |  |  |  |  |  | 0d |  | Arnoldo Martinelli - GMAS | 1.25h |  |
| 87 | 1.2.5.6.4 | Ejecución de pruebas funcionales, ajustes y documentación de pruebas |  | 10h | 2016-09-07 09:33 | 2016-09-08 11:33 | 86 |  |  |  |  |  |  |  | 0d |  | Arnoldo Martinelli - GMAS | 10h |  |
| 88 | 1.2.5.6.5 | Pase a pruebas |  | 2h | 2016-09-08 11:33 | 2016-09-08 14:33 | 87 |  |  |  |  |  |  |  | 0d |  | Arnoldo Martinelli - GMAS | 2h |  |
| 89 | 1.2.5.6.6 | Ejecución de pruebas QA y Ajustes |  | 6h | 2016-09-08 14:33 | 2016-09-09 11:33 | 88 |  |  |  |  |  |  |  | 0d |  | Arnoldo Martinelli - GMAS; Equipo QA - BCR | 12h |  |
| 90 | 1.2.6 | **Pruebas de Usuario** |  | 17.31d | 2016-09-09 11:33 | 2016-10-04 15:03 | 65 |  |  | 2016-07-11 16:00 | 2016-08-08 09:30 | 17.31d | 2016-08-01 09:00 | 2016-08-26 11:30 | 0d |  |  | 152.2h |  |
| 91 | 1.2.6.1 | **Ejecución de Pruebas** |  | 17.31d | 2016-09-09 11:33 | 2016-10-04 15:03 |  |  |  | 2016-07-11 16:00 | 2016-08-08 09:30 | 17.31d | 2016-08-01 09:00 | 2016-08-26 11:30 | 0d |  |  | 152.2h |  |
| 92 | 1.2.6.1.1 | **Iteración 1** |  | 14d | 2016-09-09 11:33 | 2016-09-29 11:33 |  |  |  | 2016-07-11 16:00 | 2016-08-01 16:00 | 14d | 2016-08-01 09:00 | 2016-08-23 09:00 | 0d |  |  | 123.2h |  |
| 93 | 1.2.6.1.1.1 | Aplicación de Pruebas |  | 14d | 2016-09-09 11:33 | 2016-09-29 11:33 |  |  |  | 2016-07-11 16:00 | 2016-08-01 16:00 | 14d | 2016-08-01 09:00 | 2016-08-23 09:00 | 0d |  | Usuarios Funcionales - BCR | 112h |  |
| 94 | 1.2.6.1.1.2 | Ajustes/Pruebas |  | 14d | 2016-09-09 11:33 | 2016-09-29 11:33 | 65 |  |  | 2016-07-11 16:00 | 2016-08-01 16:00 | 14d | 2016-08-01 09:00 | 2016-08-23 09:00 | 0d |  | Mario Murillo - GMAS [5%]; Cesar Loaiza - GMAS [5%] | 11.2h |  |
| 95 | 1.2.6.1.2 | **Iteración 2** |  | 3.31d | 2016-09-29 11:33 | 2016-10-04 15:03 | 92 |  |  | 2016-08-01 16:00 | 2016-08-08 09:30 | 3.31d | 2016-08-23 09:00 | 2016-08-26 11:30 | 0d |  |  | 29h |  |
| 96 | 1.2.6.1.2.1 | Pase a pruebas |  | 2.5h | 2016-09-29 11:33 | 2016-09-29 15:03 |  |  |  | 2016-08-01 16:00 | 2016-08-03 09:30 | 2.5h | 2016-08-23 09:00 | 2016-08-23 11:30 | 0d |  | Cesar Loaiza - GMAS; Equipo TI - BCR | 5h |  |
| 97 | 1.2.6.1.2.2 | Ejecución de pruebas y documentación |  | 3d | 2016-09-29 15:03 | 2016-10-04 15:03 | 96 |  |  | 2016-08-03 09:30 | 2016-08-08 09:30 | 3d | 2016-08-23 11:30 | 2016-08-26 11:30 | 0d |  | Usuarios Funcionales - BCR | 24h |  |
| 98 | 1.2.7 | **Documentación** |  | 1d | 2016-09-29 11:33 | 2016-09-30 11:33 | 92 |  |  | 2016-08-08 09:30 | 2016-08-09 09:30 | 1d | 2016-08-23 09:00 | 2016-08-24 09:00 | 2.71d |  |  | 16h |  |
| 99 | 1.2.7.1 | Manual Técnico |  | 1d | 2016-09-29 11:33 | 2016-09-30 11:33 |  |  |  | 2016-08-08 09:30 | 2016-08-09 09:30 | 1d | 2016-08-23 09:00 | 2016-08-24 09:00 | 2.71d |  | Cesar Loaiza - GMAS; Mario Murillo - GMAS | 16h |  |
| 100 | 1.2.8 | **Cierre** |  | 0.4d | 2016-10-04 15:03 | 2016-10-05 09:15 | 90 |  |  | 2016-08-09 09:30 | 2016-08-09 13:42 | 0.4d | 2016-08-26 11:30 | 2016-08-26 15:42 | 0d |  |  | 6.8h |  |
| 101 | 1.2.8.1 | Preparación de Control Horas e Informe |  | 2h | 2016-10-04 15:03 | 2016-10-05 08:03 |  |  |  | 2016-08-09 09:30 | 2016-08-09 11:30 | 2h | 2016-08-26 11:30 | 2016-08-26 14:30 | 0d |  | Gabriela Dittel - GMAS | 2h |  |
| 102 | 1.2.8.2 | Revisión de Documentos y Cierre |  | 1.2h | 2016-10-05 08:03 | 2016-10-05 09:15 | 101 |  |  | 2016-08-09 11:30 | 2016-08-09 13:42 | 1.2h | 2016-08-26 14:30 | 2016-08-26 15:42 | 0d |  | Equipo Negocio - BCR; Equipo QA - BCR; Equipo TI - BCR; Gabriela Dittel - GMAS | 4.8h |  |
| 104 | 1.3 | **Administración de Proyecto** |  | 128.12d | 2016-03-29 08:00 A | 2016-09-29 09:00 |  | 71% | 36.74d | 2016-03-29 08:00 | 2016-08-04 09:00 | 88.12d | 2016-03-29 08:00 | 2016-08-26 09:00 | 0d |  |  | 99.5h | 71h |
| 105 | 1.3.1 | **Labores gestión proyecto (atención cliente, controles de cambio)** |  | 126.12d | 2016-03-29 08:00 A | 2016-09-27 09:00 |  | 71% | 36.62d | 2016-03-29 08:00 | 2016-08-02 09:00 | 87d | 2016-03-29 08:00 | 2016-08-26 09:00 | 0d |  |  | 15.5h | 11h |
| 106 | 1.3.1.1 | Labores gestión proyecto (atención cliente, controles de cambio) 1 | manual | 1h | 2016-03-29 08:00 A | 2016-03-29 09:00 A |  | 100% |  | 2016-03-29 08:00 | 2016-03-29 09:00 | 1h | 2016-03-29 08:00 | 2016-03-29 09:00 |  | start no earlier than 2016-03-29 08:00 | Gabriela Dittel - GMAS | 1h | 1h |
| 107 | 1.3.1.2 | Labores gestión proyecto (atención cliente, controles de cambio) 2 | manual | 1h | 2016-04-12 08:00 A | 2016-04-12 09:00 A |  | 100% |  | 2016-04-12 08:00 | 2016-04-12 09:00 | 1h | 2016-04-12 08:00 | 2016-04-12 09:00 |  | start no earlier than 2016-04-12 08:00 | Gabriela Dittel - GMAS | 1h | 1h |
| 108 | 1.3.1.3 | Labores gestión proyecto (atención cliente, controles de cambio) 3 | manual | 1h | 2016-04-26 08:00 A | 2016-04-26 09:00 A |  | 100% |  | 2016-04-26 08:00 | 2016-04-26 09:00 | 1h | 2016-04-26 08:00 | 2016-04-26 09:00 |  | start no earlier than 2016-04-26 08:00 | Gabriela Dittel - GMAS | 1h | 1h |
| 109 | 1.3.1.4 | Labores gestión proyecto (atención cliente, controles de cambio) 4 | manual | 1h | 2016-05-10 08:00 A | 2016-05-10 09:00 A |  | 100% |  | 2016-05-10 08:00 | 2016-05-10 09:00 | 1h | 2016-05-10 08:00 | 2016-05-10 09:00 |  | start no earlier than 2016-05-10 08:00 | Gabriela Dittel - GMAS | 1h | 1h |
| 110 | 1.3.1.5 | Labores gestión proyecto (atención cliente, controles de cambio) 5 | manual | 1h | 2016-05-24 08:00 A | 2016-05-24 09:00 A |  | 100% |  | 2016-05-24 08:00 | 2016-05-24 09:00 | 1h | 2016-05-24 08:00 | 2016-05-24 09:00 |  | start no earlier than 2016-05-24 08:00 | Gabriela Dittel - GMAS | 1h | 1h |
| 111 | 1.3.1.6 | Labores gestión proyecto (atención cliente, controles de cambio) 6 | manual | 1h | 2016-06-07 08:00 A | 2016-06-07 09:00 A |  | 100% |  | 2016-06-07 08:00 | 2016-06-07 09:00 | 1h | 2016-06-07 08:00 | 2016-06-07 09:00 |  | start no earlier than 2016-06-07 08:00 | Gabriela Dittel - GMAS | 1h | 1h |
| 112 | 1.3.1.7 | Labores gestión proyecto (atención cliente, controles de cambio) 7 | manual | 1h | 2016-06-21 08:00 A | 2016-06-21 09:00 A |  | 100% |  | 2016-06-21 08:00 | 2016-06-21 09:00 | 1h | 2016-06-21 08:00 | 2016-06-21 09:00 |  | start no earlier than 2016-06-21 08:00 | Gabriela Dittel - GMAS | 1h | 1h |
| 113 | 1.3.1.8 | Labores gestión proyecto (atención cliente, controles de cambio) 8 | manual | 1h | 2016-07-05 08:00 A | 2016-07-05 09:00 A |  | 100% |  | 2016-07-05 08:00 | 2016-07-05 09:00 | 1h | 2016-07-05 08:00 | 2016-07-05 09:00 |  | start no earlier than 2016-07-05 08:00 | Gabriela Dittel - GMAS | 1h | 1h |
| 114 | 1.3.1.9 | Labores gestión proyecto (atención cliente, controles de cambio) 9 | manual | 1h | 2016-07-19 08:00 A | 2016-07-19 09:00 A |  | 100% |  | 2016-07-19 08:00 | 2016-07-19 09:00 | 1h | 2016-07-19 08:00 | 2016-07-19 09:00 |  | start no earlier than 2016-07-19 08:00 | Gabriela Dittel - GMAS | 1h | 1h |
| 115 | 1.3.1.10 | Labores gestión proyecto (atención cliente, controles de cambio) 10 | manual | 1h | 2016-08-02 08:00 A | 2016-08-02 09:00 A |  | 100% |  | 2016-08-02 08:00 | 2016-08-02 09:00 | 1h | 2016-08-02 08:00 | 2016-08-02 09:00 |  | start no earlier than 2016-08-02 08:00 | Gabriela Dittel - GMAS | 1h | 1h |
| 116 | 1.3.1.11 | Labores gestión proyecto (atención cliente, controles de cambio) 11 | manual | 1h | 2016-08-16 08:00 A | 2016-08-16 09:00 A |  | 100% |  |  |  |  | 2016-08-16 08:00 | 2016-08-16 09:00 |  | start no earlier than 2016-08-16 08:00 | Gabriela Dittel - GMAS | 1h | 1h |
| 117 | 1.3.1.12 | Labores gestión proyecto (atención cliente, controles de cambio) 12 | manual | 2.5h | 2016-09-06 08:00 | 2016-09-06 10:30 |  |  |  |  |  |  | 2016-08-26 08:00 | 2016-08-26 09:00 |  | start no earlier than 2016-09-06 08:00 | Gabriela Dittel - GMAS | 2.5h |  |
| 118 | 1.3.1.13 | Labores gestión proyecto (atención cliente, controles de cambio) 13 | manual | 1h | 2016-09-13 08:00 | 2016-09-13 09:00 |  |  |  |  |  |  |  |  |  | start no earlier than 2016-09-13 08:00 | Gabriela Dittel - GMAS | 1h |  |
| 119 | 1.3.1.14 | Labores gestión proyecto (atención cliente, controles de cambio) 14 | manual | 1h | 2016-09-27 08:00 | 2016-09-27 09:00 |  |  |  |  |  |  |  |  |  | start no earlier than 2016-09-27 08:00 | Gabriela Dittel - GMAS | 1h |  |

| ID | WBS | Task | Type | Duration | Start | Finish | Complete | Remaining | Baseline start | Baseline finish | Baseline duration | Baseline 1 start | Baseline 1 finish | Total slack | Constraint | Resources | Work | Actual work |
| --- | --- | --- | --- | --- | --- | --- | --- | --- | --- | --- | --- | --- | --- | --- | --- | --- | --- | --- |
| 120 | 1.3.2 | **Actualización Cronograma** |  | 126.12d | 2016-03-30 08:00 A | 2016-09-28 09:00 | 71% | 36.04d | 2016-03-30 08:00 | 2016-08-03 09:00 | 86.12d | 2016-03-30 08:00 | 2016-08-26 09:00 | 0d |  |  | 14h | 10h |
| 121 | 1.3.2.1 | Actualización Cronograma 1 | manual | 1h | 2016-03-30 08:00 A | 2016-03-30 09:00 A | 100% |  | 2016-03-30 08:00 | 2016-03-30 09:00 | 1h | 2016-03-30 08:00 | 2016-03-30 09:00 |  | start no earlier than 2016-03-30 08:00 | Gabriela Dittel - GMAS | 1h | 1h |
| 122 | 1.3.2.2 | Actualización Cronograma 2 | manual | 1h | 2016-04-13 08:00 A | 2016-04-13 09:00 A | 100% |  | 2016-04-13 08:00 | 2016-04-13 09:00 | 1h | 2016-04-13 08:00 | 2016-04-13 09:00 |  | start no earlier than 2016-04-13 08:00 | Gabriela Dittel - GMAS | 1h | 1h |
| 123 | 1.3.2.3 | Actualización Cronograma 3 | manual | 1h | 2016-04-27 08:00 A | 2016-04-27 09:00 A | 100% |  | 2016-04-27 08:00 | 2016-04-27 09:00 | 1h | 2016-04-27 08:00 | 2016-04-27 09:00 |  | start no earlier than 2016-04-27 08:00 | Gabriela Dittel - GMAS | 1h | 1h |
| 124 | 1.3.2.4 | Actualización Cronograma 4 | manual | 1h | 2016-05-11 08:00 A | 2016-05-11 09:00 A | 100% |  | 2016-05-11 08:00 | 2016-05-11 09:00 | 1h | 2016-05-11 08:00 | 2016-05-11 09:00 |  | start no earlier than 2016-05-11 08:00 | Gabriela Dittel - GMAS | 1h | 1h |
| 125 | 1.3.2.5 | Actualización Cronograma 5 | manual | 1h | 2016-05-25 08:00 A | 2016-05-25 09:00 A | 100% |  | 2016-05-25 08:00 | 2016-05-25 09:00 | 1h | 2016-05-25 08:00 | 2016-05-25 09:00 |  | start no earlier than 2016-05-25 08:00 | Gabriela Dittel - GMAS | 1h | 1h |
| 126 | 1.3.2.6 | Actualización Cronograma 6 | manual | 1h | 2016-06-15 08:00 A | 2016-06-15 09:00 A | 100% |  | 2016-06-08 08:00 | 2016-06-08 09:00 | 1h | 2016-06-15 08:00 | 2016-06-15 09:00 |  | start no earlier than 2016-06-15 08:00 | Gabriela Dittel - GMAS | 1h | 1h |
| 127 | 1.3.2.7 | Actualización Cronograma 7 | manual | 1h | 2016-06-22 08:00 A | 2016-06-22 09:00 A | 100% |  | 2016-06-22 08:00 | 2016-06-22 09:00 | 1h | 2016-06-29 08:00 | 2016-06-29 09:00 |  | start no earlier than 2016-06-22 08:00 | Gabriela Dittel - GMAS | 1h | 1h |
| 128 | 1.3.2.8 | Actualización Cronograma 8 | manual | 1h | 2016-07-06 08:00 A | 2016-07-06 09:00 A | 100% |  | 2016-07-06 08:00 | 2016-07-06 09:00 | 1h | 2016-07-13 08:00 | 2016-07-13 09:00 |  | start no earlier than 2016-07-06 08:00 | Gabriela Dittel - GMAS | 1h | 1h |
| 129 | 1.3.2.9 | Actualización Cronograma 9 | manual | 1h | 2016-07-20 08:00 A | 2016-07-20 09:00 A | 100% |  | 2016-07-20 08:00 | 2016-07-20 09:00 | 1h | 2016-08-03 08:00 | 2016-08-03 09:00 |  | start no earlier than 2016-07-20 08:00 | Gabriela Dittel - GMAS | 1h | 1h |
| 130 | 1.3.2.10 | Actualización Cronograma 10 | manual | 1h | 2016-08-03 08:00 A | 2016-08-03 09:00 A | 100% |  | 2016-08-03 08:00 | 2016-08-03 09:00 | 1h | 2016-08-17 08:00 | 2016-08-17 09:00 |  | start no earlier than 2016-08-03 08:00 | Gabriela Dittel - GMAS | 1h | 1h |
| 131 | 1.3.2.11 | Actualización Cronograma 11 | manual | 1h | 2016-08-17 08:00 | 2016-08-17 09:00 |  |  |  |  |  | 2016-08-26 08:00 | 2016-08-26 09:00 |  | start no earlier than 2016-08-17 08:00 | Gabriela Dittel - GMAS | 1h |  |
| 132 | 1.3.2.12 | Actualización Cronograma 12 | manual | 1h | 2016-08-31 08:00 | 2016-08-31 09:00 |  |  |  |  |  |  |  |  | start no earlier than 2016-08-31 08:00 | Gabriela Dittel - GMAS | 1h |  |
| 133 | 1.3.2.13 | Actualización Cronograma 13 | manual | 1h | 2016-09-14 08:00 | 2016-09-14 09:00 |  |  |  |  |  |  |  |  | start no earlier than 2016-09-14 08:00 | Gabriela Dittel - GMAS | 1h |  |
| 134 | 1.3.2.14 | Actualización Cronograma 14 | manual | 1h | 2016-09-28 08:00 | 2016-09-28 09:00 |  |  |  |  |  |  |  |  | start no earlier than 2016-09-28 08:00 | Gabriela Dittel - GMAS | 1h |  |
| 135 | 1.3.3 | **Actualización Control de Horas BCR** |  | 126.12d | 2016-03-30 08:00 A | 2016-09-28 09:00 | 71% | 36.04d | 2016-03-30 08:00 | 2016-08-03 09:00 | 86.12d | 2016-03-30 08:00 | 2016-08-26 09:00 | 0d |  |  | 14h | 10h |
| 136 | 1.3.3.1 | Actualización Control de Horas BCR 1 | manual | 1h | 2016-03-30 08:00 A | 2016-03-30 09:00 A | 100% |  | 2016-03-30 08:00 | 2016-03-30 09:00 | 1h | 2016-03-30 08:00 | 2016-03-30 09:00 |  | start no earlier than 2016-03-30 08:00 | Gabriela Dittel - GMAS | 1h | 1h |
| 137 | 1.3.3.2 | Actualización Control de Horas BCR 2 | manual | 1h | 2016-04-13 08:00 A | 2016-04-13 09:00 A | 100% |  | 2016-04-13 08:00 | 2016-04-13 09:00 | 1h | 2016-04-13 08:00 | 2016-04-13 09:00 |  | start no earlier than 2016-04-13 08:00 | Gabriela Dittel - GMAS | 1h | 1h |
| 138 | 1.3.3.3 | Actualización Control de Horas BCR 3 | manual | 1h | 2016-04-27 08:00 A | 2016-04-27 09:00 A | 100% |  | 2016-04-27 08:00 | 2016-04-27 09:00 | 1h | 2016-04-27 08:00 | 2016-04-27 09:00 |  | start no earlier than 2016-04-27 08:00 | Gabriela Dittel - GMAS | 1h | 1h |
| 139 | 1.3.3.4 | Actualización Control de Horas BCR 4 | manual | 1h | 2016-05-11 08:00 A | 2016-05-11 09:00 A | 100% |  | 2016-05-11 08:00 | 2016-05-11 09:00 | 1h | 2016-05-11 08:00 | 2016-05-11 09:00 |  | start no earlier than 2016-05-11 08:00 | Gabriela Dittel - GMAS | 1h | 1h |
| 140 | 1.3.3.5 | Actualización Control de Horas BCR 5 | manual | 1h | 2016-05-25 08:00 A | 2016-05-25 09:00 A | 100% |  | 2016-05-25 08:00 | 2016-05-25 09:00 | 1h | 2016-05-25 08:00 | 2016-05-25 09:00 |  | start no earlier than 2016-05-25 08:00 | Gabriela Dittel - GMAS | 1h | 1h |
| 141 | 1.3.3.6 | Actualización Control de Horas BCR 6 | manual | 1h | 2016-06-15 08:00 A | 2016-06-15 09:00 A | 100% |  | 2016-06-08 08:00 | 2016-06-08 09:00 | 1h | 2016-06-15 08:00 | 2016-06-15 09:00 |  | start no earlier than 2016-06-15 08:00 | Gabriela Dittel - GMAS | 1h | 1h |
| 142 | 1.3.3.7 | Actualización Control de Horas BCR 7 | manual | 1h | 2016-06-22 08:00 A | 2016-06-22 09:00 A | 100% |  | 2016-06-22 08:00 | 2016-06-22 09:00 | 1h | 2016-06-29 08:00 | 2016-06-29 09:00 |  | start no earlier than 2016-06-22 08:00 | Gabriela Dittel - GMAS | 1h | 1h |
| 143 | 1.3.3.8 | Actualización Control de Horas BCR 8 | manual | 1h | 2016-07-06 08:00 A | 2016-07-06 09:00 A | 100% |  | 2016-07-06 08:00 | 2016-07-06 09:00 | 1h | 2016-07-13 08:00 | 2016-07-13 09:00 |  | start no earlier than 2016-07-06 08:00 | Gabriela Dittel - GMAS | 1h | 1h |
| 144 | 1.3.3.9 | Actualización Control de Horas BCR 9 | manual | 1h | 2016-07-20 08:00 A | 2016-07-20 09:00 A | 100% |  | 2016-07-20 08:00 | 2016-07-20 09:00 | 1h | 2016-08-03 08:00 | 2016-08-03 09:00 |  | start no earlier than 2016-07-20 08:00 | Gabriela Dittel - GMAS | 1h | 1h |
| 145 | 1.3.3.10 | Actualización Control de Horas BCR 10 | manual | 1h | 2016-08-03 08:00 A | 2016-08-03 09:00 A | 100% |  | 2016-08-03 08:00 | 2016-08-03 09:00 | 1h | 2016-08-17 08:00 | 2016-08-17 09:00 |  | start no earlier than 2016-08-03 08:00 | Gabriela Dittel - GMAS | 1h | 1h |
| 146 | 1.3.3.11 | Actualización Control de Horas BCR 11 | manual | 1h | 2016-08-17 08:00 | 2016-08-17 09:00 |  |  |  |  |  | 2016-08-26 08:00 | 2016-08-26 09:00 |  | start no earlier than 2016-08-17 08:00 | Gabriela Dittel - GMAS | 1h |  |
| 147 | 1.3.3.12 | Actualización Control de Horas BCR 12 | manual | 1h | 2016-08-31 08:00 | 2016-08-31 09:00 |  |  |  |  |  |  |  |  | start no earlier than 2016-08-31 08:00 | Gabriela Dittel - GMAS | 1h |  |
| 148 | 1.3.3.13 | Actualización Control de Horas BCR 13 | manual | 1h | 2016-09-14 08:00 | 2016-09-14 09:00 |  |  |  |  |  |  |  |  | start no earlier than 2016-09-14 08:00 | Gabriela Dittel - GMAS | 1h |  |
| 149 | 1.3.3.14 | Actualización Control de Horas BCR 14 | manual | 1h | 2016-09-28 08:00 | 2016-09-28 09:00 |  |  |  |  |  |  |  |  | start no earlier than 2016-09-28 08:00 | Gabriela Dittel - GMAS | 1h |  |

| ID | WBS | Task | Type | Duration | Start | Finish | Complete | Remaining | Baseline start | Baseline finish | Baseline duration | Baseline 1 start | Baseline 1 finish | Total slack | Constraint | Resources | Work | Actual work |
| --- | --- | --- | --- | --- | --- | --- | --- | --- | --- | --- | --- | --- | --- | --- | --- | --- | --- | --- |
| 150 | 1.3.4 | **Preparación de Informe de Avance** |  | 126.12d | 2016-03-30 08:00 A | 2016-09-28 09:00 | 71% | 36.04d | 2016-03-30 08:00 | 2016-08-03 09:00 | 86.12d | 2016-03-30 08:00 | 2016-08-26 09:00 | 0d |  |  | 14h | 10h |
| 151 | 1.3.4.1 | Preparación de Informe de Avance 1 | manual | 1h | 2016-03-30 08:00 A | 2016-03-30 09:00 A | 100% |  | 2016-03-30 08:00 | 2016-03-30 09:00 | 1h | 2016-03-30 08:00 | 2016-03-30 09:00 |  | start no earlier than 2016-03-30 08:00 | Gabriela Dittel - GMAS | 1h | 1h |
| 152 | 1.3.4.2 | Preparación de Informe de Avance 2 | manual | 1h | 2016-04-13 08:00 A | 2016-04-13 09:00 A | 100% |  | 2016-04-13 08:00 | 2016-04-13 09:00 | 1h | 2016-04-13 08:00 | 2016-04-13 09:00 |  | start no earlier than 2016-04-13 08:00 | Gabriela Dittel - GMAS | 1h | 1h |
| 153 | 1.3.4.3 | Preparación de Informe de Avance 3 | manual | 1h | 2016-04-27 08:00 A | 2016-04-27 09:00 A | 100% |  | 2016-04-27 08:00 | 2016-04-27 09:00 | 1h | 2016-04-27 08:00 | 2016-04-27 09:00 |  | start no earlier than 2016-04-27 08:00 | Gabriela Dittel - GMAS | 1h | 1h |
| 154 | 1.3.4.4 | Preparación de Informe de Avance 4 | manual | 1h | 2016-05-11 08:00 A | 2016-05-11 09:00 A | 100% |  | 2016-05-11 08:00 | 2016-05-11 09:00 | 1h | 2016-05-11 08:00 | 2016-05-11 09:00 |  | start no earlier than 2016-05-11 08:00 | Gabriela Dittel - GMAS | 1h | 1h |
| 155 | 1.3.4.5 | Preparación de Informe de Avance 5 | manual | 1h | 2016-05-25 08:00 A | 2016-05-25 09:00 A | 100% |  | 2016-05-25 08:00 | 2016-05-25 09:00 | 1h | 2016-05-25 08:00 | 2016-05-25 09:00 |  | start no earlier than 2016-05-25 08:00 | Gabriela Dittel - GMAS | 1h | 1h |
| 156 | 1.3.4.6 | Preparación de Informe de Avance 6 | manual | 1h | 2016-06-15 08:00 A | 2016-06-15 09:00 A | 100% |  | 2016-06-08 08:00 | 2016-06-08 09:00 | 1h | 2016-06-15 08:00 | 2016-06-15 09:00 |  | start no earlier than 2016-06-15 08:00 | Gabriela Dittel - GMAS | 1h | 1h |
| 157 | 1.3.4.7 | Preparación de Informe de Avance 7 | manual | 1h | 2016-06-22 08:00 A | 2016-06-22 09:00 A | 100% |  | 2016-06-22 08:00 | 2016-06-22 09:00 | 1h | 2016-06-29 08:00 | 2016-06-29 09:00 |  | start no earlier than 2016-06-22 08:00 | Gabriela Dittel - GMAS | 1h | 1h |
| 158 | 1.3.4.8 | Preparación de Informe de Avance 8 | manual | 1h | 2016-07-06 08:00 A | 2016-07-06 09:00 A | 100% |  | 2016-07-06 08:00 | 2016-07-06 09:00 | 1h | 2016-07-13 08:00 | 2016-07-13 09:00 |  | start no earlier than 2016-07-06 08:00 | Gabriela Dittel - GMAS | 1h | 1h |
| 159 | 1.3.4.9 | Preparación de Informe de Avance 9 | manual | 1h | 2016-07-20 08:00 A | 2016-07-20 09:00 A | 100% |  | 2016-07-20 08:00 | 2016-07-20 09:00 | 1h | 2016-08-03 08:00 | 2016-08-03 09:00 |  | start no earlier than 2016-07-20 08:00 | Gabriela Dittel - GMAS | 1h | 1h |
| 160 | 1.3.4.10 | Preparación de Informe de Avance 10 | manual | 1h | 2016-08-03 08:00 A | 2016-08-03 09:00 A | 100% |  | 2016-08-03 08:00 | 2016-08-03 09:00 | 1h | 2016-08-17 08:00 | 2016-08-17 09:00 |  | start no earlier than 2016-08-03 08:00 | Gabriela Dittel - GMAS | 1h | 1h |
| 161 | 1.3.4.11 | Preparación de Informe de Avance 11 | manual | 1h | 2016-08-17 08:00 | 2016-08-17 09:00 |  |  |  |  |  | 2016-08-26 08:00 | 2016-08-26 09:00 |  | start no earlier than 2016-08-17 08:00 | Gabriela Dittel - GMAS | 1h |  |
| 162 | 1.3.4.12 | Preparación de Informe de Avance 12 | manual | 1h | 2016-08-31 08:00 | 2016-08-31 09:00 |  |  |  |  |  |  |  |  | start no earlier than 2016-08-31 08:00 | Gabriela Dittel - GMAS | 1h |  |
| 163 | 1.3.4.13 | Preparación de Informe de Avance 13 | manual | 1h | 2016-09-14 08:00 | 2016-09-14 09:00 |  |  |  |  |  |  |  |  | start no earlier than 2016-09-14 08:00 | Gabriela Dittel - GMAS | 1h |  |
| 164 | 1.3.4.14 | Preparación de Informe de Avance 14 | manual | 1h | 2016-09-28 08:00 | 2016-09-28 09:00 |  |  |  |  |  |  |  |  | start no earlier than 2016-09-28 08:00 | Gabriela Dittel - GMAS | 1h |  |
| 165 | 1.3.5 | **Sesión seguimiento con Comité de Proyecto** |  | 126.12d | 2016-03-31 08:00 A | 2016-09-29 09:00 | 71% | 36.04d | 2016-03-31 08:00 | 2016-08-04 09:00 | 86.12d | 2016-03-31 08:00 | 2016-08-26 09:00 | 0d |  |  | 42h | 30h |
| 166 | 1.3.5.1 | Sesión seguimiento con Comité de Proyecto 1 | manual | 1h | 2016-03-31 08:00 A | 2016-03-31 09:00 A | 100% |  | 2016-03-31 08:00 | 2016-03-31 09:00 | 1h | 2016-03-31 08:00 | 2016-03-31 09:00 |  | start no earlier than 2016-03-31 08:00 | Equipo Negocio - BCR; Equipo TI - BCR; Gabriela Dittel - GMAS | 3h | 3h |
| 167 | 1.3.5.2 | Sesión seguimiento con Comité de Proyecto 2 | manual | 1h | 2016-04-14 08:00 A | 2016-04-14 09:00 A | 100% |  | 2016-04-14 08:00 | 2016-04-14 09:00 | 1h | 2016-04-14 08:00 | 2016-04-14 09:00 |  | start no earlier than 2016-04-14 08:00 | Equipo Negocio - BCR; Equipo TI - BCR; Gabriela Dittel - GMAS | 3h | 3h |
| 168 | 1.3.5.3 | Sesión seguimiento con Comité de Proyecto 3 | manual | 1h | 2016-04-28 08:00 A | 2016-04-28 09:00 A | 100% |  | 2016-04-28 08:00 | 2016-04-28 09:00 | 1h | 2016-04-28 08:00 | 2016-04-28 09:00 |  | start no earlier than 2016-04-28 08:00 | Equipo Negocio - BCR; Equipo TI - BCR; Gabriela Dittel - GMAS | 3h | 3h |
| 169 | 1.3.5.4 | Sesión seguimiento con Comité de Proyecto 4 | manual | 1h | 2016-05-12 08:00 A | 2016-05-12 09:00 A | 100% |  | 2016-05-12 08:00 | 2016-05-12 09:00 | 1h | 2016-05-12 08:00 | 2016-05-12 09:00 |  | start no earlier than 2016-05-12 08:00 | Equipo Negocio - BCR; Equipo TI - BCR; Gabriela Dittel - GMAS | 3h | 3h |
| 170 | 1.3.5.5 | Sesión seguimiento con Comité de Proyecto 5 | manual | 1h | 2016-05-26 08:00 A | 2016-05-26 09:00 A | 100% |  | 2016-05-26 08:00 | 2016-05-26 09:00 | 1h | 2016-05-26 08:00 | 2016-05-26 09:00 |  | start no earlier than 2016-05-26 08:00 | Equipo Negocio - BCR; Equipo TI - BCR; Gabriela Dittel - GMAS | 3h | 3h |
| 171 | 1.3.5.6 | Sesión seguimiento con Comité de Proyecto 6 | manual | 1h | 2016-06-16 08:00 A | 2016-06-16 09:00 A | 100% |  | 2016-06-09 08:00 | 2016-06-09 09:00 | 1h | 2016-06-16 08:00 | 2016-06-16 09:00 |  | start no earlier than 2016-06-16 08:00 | Equipo Negocio - BCR; Equipo TI - BCR; Gabriela Dittel - GMAS | 3h | 3h |
| 172 | 1.3.5.7 | Sesión seguimiento con Comité de Proyecto 7 | manual | 1h | 2016-06-23 08:00 A | 2016-06-23 09:00 A | 100% |  | 2016-06-23 08:00 | 2016-06-23 09:00 | 1h | 2016-06-30 08:00 | 2016-06-30 09:00 |  | start no earlier than 2016-06-23 08:00 | Equipo Negocio - BCR; Equipo TI - BCR; Gabriela Dittel - GMAS | 3h | 3h |
| 173 | 1.3.5.8 | Sesión seguimiento con Comité de Proyecto 8 | manual | 1h | 2016-07-07 08:00 A | 2016-07-07 09:00 A | 100% |  | 2016-07-07 08:00 | 2016-07-07 09:00 | 1h | 2016-07-14 08:00 | 2016-07-14 09:00 |  | start no earlier than 2016-07-07 08:00 | Equipo Negocio - BCR; Equipo TI - BCR; Gabriela Dittel - GMAS | 3h | 3h |
| 174 | 1.3.5.9 | Sesión seguimiento con Comité de Proyecto 9 | manual | 1h | 2016-07-21 08:00 A | 2016-07-21 09:00 A | 100% |  | 2016-07-21 08:00 | 2016-07-21 09:00 | 1h | 2016-08-04 08:00 | 2016-08-04 09:00 |  | start no earlier than 2016-07-21 08:00 | Equipo Negocio - BCR; Equipo TI - BCR; Gabriela Dittel - GMAS | 3h | 3h |
| 175 | 1.3.5.10 | Sesión seguimiento con Comité de Proyecto 10 | manual | 1h | 2016-08-04 08:00 A | 2016-08-04 09:00 A | 100% |  | 2016-08-04 08:00 | 2016-08-04 09:00 | 1h | 2016-08-18 08:00 | 2016-08-18 09:00 |  | start no earlier than 2016-08-04 08:00 | Equipo Negocio - BCR; Equipo TI - BCR; Gabriela Dittel - GMAS | 3h | 3h |
| 176 | 1.3.5.11 | Sesión seguimiento con Comité de Proyecto 11 | manual | 1h | 2016-08-18 08:00 | 2016-08-18 09:00 |  |  |  |  |  | 2016-08-26 08:00 | 2016-08-26 09:00 |  | start no earlier than 2016-08-18 08:00 | Equipo Negocio - BCR; Equipo TI - BCR; Gabriela Dittel - GMAS | 3h |  |
| 177 | 1.3.5.12 | Sesión seguimiento con Comité de Proyecto 12 | manual | 1h | 2016-09-01 08:00 | 2016-09-01 09:00 |  |  |  |  |  |  |  |  | start no earlier than 2016-09-01 08:00 | Equipo Negocio - BCR; Equipo TI - BCR; Gabriela Dittel - GMAS | 3h |  |
| 178 | 1.3.5.13 | Sesión seguimiento con Comité de Proyecto 13 | manual | 1h | 2016-09-15 08:00 | 2016-09-15 09:00 |  |  |  |  |  |  |  |  | start no earlier than 2016-09-15 08:00 | Equipo Negocio - BCR; Equipo TI - BCR; Gabriela Dittel - GMAS | 3h |  |
| 179 | 1.3.5.14 | Sesión seguimiento con Comité de Proyecto 14 | manual | 1h | 2016-09-29 08:00 | 2016-09-29 09:00 |  |  |  |  |  |  |  |  | start no earlier than 2016-09-29 08:00 | Equipo Negocio - BCR; Equipo TI - BCR; Gabriela Dittel - GMAS | 3h |  |
