# CC-01_BCR-SIG-001_20160413 - Sprints 3-4-5

Schedule from MS Project, 2016-08-16 to 2016-09-27.

## Calendars

- Standard: Mon-Fri 08:00-12:00, 13:00-17:00; Sat-Sun off. Exceptions (off unless hours are given): 2016-09-15 (Día de la Independencia).
- Estándar: Mon-Fri 08:00-12:00, 13:00-17:00; Sat-Sun off.

## Resources

| Resource |
| --- |
| Stephanie Barahona - GMAS |
| Gabriela Dittel - GMAS |
| Ulises Rivera - GMAS |
| Alexander Cruz - GMAS |
| Equipo Negocio - BCR |
| Equipo TI - BCR |
| Equipo QA - BCR |
| Víctor Zúñiga - GMAS |
| Usuarios Funcionales - BCR |
| Vladimir Guzmán - GMAS |
| Mario Murillo - GMAS |
| Arnoldo Martinelli - GMAS |

## Schedule

| ID | WBS | Task | Type | Duration | Start | Finish | Predecessors | Total slack | Constraint | Resources | Work |
| --- | --- | --- | --- | --- | --- | --- | --- | --- | --- | --- | --- |
| 1 | 1 | **SIGANEM Bloque 02 - Fase 02 - Sprint 5** |  | 29.4d | 2016-08-16 08:00 | 2016-09-27 11:12 |  | 0d |  |  | 339.4h |
| 2 | 1.1 | Preparación de Propuesta y Plan de Trabajo |  | 1d | 2016-08-16 08:00 | 2016-08-16 17:00 |  | 0d | start no earlier than 2016-08-16 08:00 | Stephanie Barahona - GMAS [50%]; Gabriela Dittel - GMAS; Ulises Rivera - GMAS [20%]; Alexander Cruz - GMAS [20%]; Arnoldo Martinelli - GMAS [80%] | 21.6h |
| 3 | 1.2 | **Análisis Requisitos del Sistema** |  | 0.5d | 2016-08-24 08:00 | 2016-08-24 12:00 |  | 0d |  |  | 16h |
| 4 | 1.2.1 | Validar y Evaluar Detalle los Requisitos del Sistema (RFP) |  | 0.5d | 2016-08-24 08:00 | 2016-08-24 12:00 | 2FS+5d | 0d |  | Stephanie Barahona - GMAS; Ulises Rivera - GMAS; Alexander Cruz - GMAS; Arnoldo Martinelli - GMAS | 16h |
| 5 | 1.3 | **Diseño** |  | 9.5d | 2016-08-24 13:00 | 2016-09-06 17:00 |  | 0d |  |  | 130.4h |
| 6 | 1.3.1 | **Funcional** |  | 6d | 2016-08-24 13:00 | 2016-09-01 12:00 |  | 0d |  |  | 72h |
| 7 | 1.3.1.1 | **Definición Propuesta Diseño** |  | 3d | 2016-08-24 13:00 | 2016-08-29 12:00 | 3 | 0d |  |  | 24h |
| 8 | 1.3.1.1.1 | **Diseño del requerimiento** |  | 3d | 2016-08-24 13:00 | 2016-08-29 12:00 |  | 0d |  |  | 24h |
| 9 | 1.3.1.1.1.1 | Ajuste de pantalla de relación entre Garantías Reales y Fideicomisos |  | 1d | 2016-08-24 13:00 | 2016-08-25 12:00 |  | 0d |  | Stephanie Barahona - GMAS [50%]; Equipo TI - BCR [50%] | 8h |
| 10 | 1.3.1.1.1.2 | Ajuste al proceso de cálculo del Monto Grado Gravamen |  | 1d | 2016-08-25 13:00 | 2016-08-26 12:00 | 9 | 0d |  | Stephanie Barahona - GMAS [50%]; Equipo TI - BCR [50%] | 8h |
| 11 | 1.3.1.1.1.3 | Preparación de fórmula en Excel |  | 0.5d | 2016-08-26 13:00 | 2016-08-26 17:00 | 10 | 0d |  | Stephanie Barahona - GMAS | 4h |
| 12 | 1.3.1.1.1.4 | Imágenes prototipo |  | 0.5d | 2016-08-29 08:00 | 2016-08-29 12:00 | 11 | 0d |  | Stephanie Barahona - GMAS | 4h |
| 13 | 1.3.1.1.1.5 | Entrega documento diseño | milestone | 0d | 2016-08-29 12:00 | 2016-08-29 12:00 | 12 | 0d |  | Stephanie Barahona - GMAS |  |
| 14 | 1.3.1.2 | Revisión de propuesta con área de negocio |  | 1d | 2016-08-29 13:00 | 2016-08-30 12:00 | 8 | 0d |  | Equipo Negocio - BCR; Equipo TI - BCR | 16h |
| 15 | 1.3.1.3 | Ajustes Documento de diseño |  | 0.5d | 2016-08-30 13:00 | 2016-08-30 17:00 | 14 | 0d |  | Stephanie Barahona - GMAS | 4h |
| 16 | 1.3.1.4 | Entrega documento diseño final | milestone | 0d | 2016-08-30 17:00 | 2016-08-30 17:00 | 15 | 0d |  | Stephanie Barahona - GMAS |  |
| 17 | 1.3.1.5 | Revisión Final Area Negocio |  | 1d | 2016-08-31 08:00 | 2016-08-31 17:00 | 16 | 0d |  | Equipo Negocio - BCR; Equipo QA - BCR | 16h |
| 18 | 1.3.1.6 | Revisión Final TI |  | 1d | 2016-08-31 08:00 | 2016-08-31 17:00 | 16 | 0d |  | Equipo TI - BCR | 8h |
| 19 | 1.3.1.7 | Ajustes por Revisión |  | 0.5d | 2016-09-01 08:00 | 2016-09-01 12:00 | 17, 18 | 0d |  | Stephanie Barahona - GMAS | 4h |
| 20 | 1.3.1.8 | Aprobación Diseño Funcional | milestone | 0d | 2016-09-01 12:00 | 2016-09-01 12:00 | 19 | 0d |  | Equipo Negocio - BCR; Equipo QA - BCR; Equipo TI - BCR; Gabriela Dittel - GMAS; Stephanie Barahona - GMAS |  |
| 21 | 1.3.2 | **Técnico** |  | 3.5d | 2016-09-01 13:00 | 2016-09-06 17:00 | 6 | 0d |  |  | 58.4h |
| 22 | 1.3.2.1 | **Definición Propuesta Diseño** |  | 2d | 2016-09-01 13:00 | 2016-09-05 12:00 |  | 0d |  |  | 38.4h |
| 23 | 1.3.2.1.1 | Ajuste de pantalla de relación entre Garantías Reales y Fideicomisos |  | 1d | 2016-09-01 13:00 | 2016-09-02 12:00 |  | 0d |  | Alexander Cruz - GMAS [20%]; Equipo TI - BCR; Arnoldo Martinelli - GMAS; Ulises Rivera - GMAS [20%] | 19.2h |
| 24 | 1.3.2.1.2 | Ajuste al proceso de cálculo del Monto Grado Gravamen |  | 1d | 2016-09-02 13:00 | 2016-09-05 12:00 | 23 | 0d |  | Alexander Cruz - GMAS [20%]; Equipo TI - BCR; Arnoldo Martinelli - GMAS; Ulises Rivera - GMAS [20%] | 19.2h |
| 25 | 1.3.2.1.3 | Entrega Propuesta | milestone | 0d | 2016-09-05 12:00 | 2016-09-05 12:00 | 24 | 0d |  | Alexander Cruz - GMAS; Arnoldo Martinelli - GMAS |  |
| 26 | 1.3.2.2 | Revisión TI |  | 1d | 2016-09-05 13:00 | 2016-09-06 12:00 | 22 | 0d |  | Equipo TI - BCR | 8h |
| 27 | 1.3.2.3 | Ajustes por revisión |  | 0.5d | 2016-09-06 13:00 | 2016-09-06 17:00 | 26 | 0d |  | Ulises Rivera - GMAS; Arnoldo Martinelli - GMAS; Alexander Cruz - GMAS | 12h |
| 28 | 1.3.2.4 | Aprobación Apartado Técnico | milestone | 0d | 2016-09-06 17:00 | 2016-09-06 17:00 | 27 | 0d |  | Equipo TI - BCR; Gabriela Dittel - GMAS; Arnoldo Martinelli - GMAS |  |

Notes:
- 2: Contempla medio día invertido en la reunión de metodología que tuve y luego la que se realizó con Luis

| ID | WBS | Task | Duration | Start | Finish | Predecessors | Total slack | Free slack | Resources | Work |
| --- | --- | --- | --- | --- | --- | --- | --- | --- | --- | --- |
| 29 | 1.4 | **Desarrollo y pruebas internas** | 3d | 2016-09-07 08:00 | 2016-09-09 17:00 | 5 | 0d |  |  | 28.8h |
| 30 | 1.4.1 | Ajuste de pantalla de relación entre Garantías Reales y Fideicomisos | 1d | 2016-09-07 08:00 | 2016-09-07 17:00 |  | 0d |  | Arnoldo Martinelli - GMAS; Alexander Cruz - GMAS [10%]; Ulises Rivera - GMAS [10%] | 9.6h |
| 31 | 1.4.2 | Ajuste al proceso de cálculo del Monto Grado Gravamen | 2d | 2016-09-08 08:00 | 2016-09-09 17:00 | 30 | 0d |  | Arnoldo Martinelli - GMAS; Alexander Cruz - GMAS [10%]; Ulises Rivera - GMAS [10%] | 19.2h |
| 32 | 1.5 | **Pruebas Funcionales** | 7d | 2016-09-05 13:00 | 2016-09-14 12:00 | 22 | 1.25d | 0d |  | 28.8h |
| 33 | 1.5.1 | Generación de Scripts de Pruebas | 1d | 2016-09-05 13:00 | 2016-09-06 12:00 |  | 7.25d |  | Stephanie Barahona - GMAS | 8h |
| 34 | 1.5.2 | **Iteración 1** | 2d | 2016-09-12 08:00 | 2016-09-13 17:00 | 29 | 1.25d | 0d |  | 16.8h |
| 35 | 1.5.2.1 | Aplicación de Pruebas | 1.5d | 2016-09-12 08:00 | 2016-09-13 12:00 |  | 1.25d | 0d | Stephanie Barahona - GMAS | 12h |
| 36 | 1.5.2.2 | Ajustes sobre PNS | 0.5d | 2016-09-13 13:00 | 2016-09-13 17:00 | 35 | 1.25d |  | Ulises Rivera - GMAS [10%]; Arnoldo Martinelli - GMAS; Alexander Cruz - GMAS [10%] | 4.8h |
| 37 | 1.5.3 | **Iteración 2** | 0.5d | 2016-09-14 08:00 | 2016-09-14 12:00 | 34 | 1.25d |  |  | 4h |
| 38 | 1.5.3.1 | Aplicación de Pruebas | 0.5d | 2016-09-14 08:00 | 2016-09-14 12:00 |  | 1.25d |  | Stephanie Barahona - GMAS | 4h |
| 39 | 1.6 | **Pruebas de QA** | 6.75d | 2016-09-12 08:00 | 2016-09-21 15:00 | 29 | 0d |  |  | 60h |
| 40 | 1.6.1 | Generación de Scripts de Pruebas | 4d | 2016-09-12 08:00 | 2016-09-16 17:00 |  | 0d |  | Equipo QA - BCR | 32h |
| 41 | 1.6.2 | **Iteración 1** | 3.5d | 2016-09-14 13:00 | 2016-09-20 17:00 | 32 | 0d |  |  | 20h |
| 42 | 1.6.2.1 | Generacion de Pase | 2h | 2016-09-14 13:00 | 2016-09-14 15:00 |  | 1.25d |  | Arnoldo Martinelli - GMAS; Equipo TI - BCR | 4h |
| 43 | 1.6.2.2 | Aplicación de Pruebas | 1.5d | 2016-09-19 08:00 | 2016-09-20 12:00 | 42, 40 | 0d |  | Equipo QA - BCR | 12h |
| 44 | 1.6.2.3 | Ajustes sobre PNS | 0.5d | 2016-09-20 13:00 | 2016-09-20 17:00 | 43 | 0d |  | Arnoldo Martinelli - GMAS | 4h |
| 45 | 1.6.3 | **Iteración 2** | 0.75d | 2016-09-21 08:00 | 2016-09-21 15:00 |  | 0d |  |  | 8h |
| 46 | 1.6.3.1 | Generacion de Pase | 2h | 2016-09-21 08:00 | 2016-09-21 10:00 | 41 | 0d |  | Arnoldo Martinelli - GMAS; Equipo TI - BCR | 4h |
| 47 | 1.6.3.2 | Aplicación de Pruebas | 0.5d | 2016-09-21 10:00 | 2016-09-21 15:00 | 46 | 0d |  | Equipo QA - BCR | 4h |
| 48 | 1.7 | **Pruebas de Usuario** | 2.75d | 2016-09-21 15:00 | 2016-09-26 12:00 | 39 | 0d |  |  | 24h |
| 49 | 1.7.1 | **Ejecución de Pruebas** | 2.75d | 2016-09-21 15:00 | 2016-09-26 12:00 |  | 0d |  |  | 24h |
| 50 | 1.7.1.1 | **Iteración 1** | 2d | 2016-09-21 15:00 | 2016-09-23 15:00 |  | 0d |  |  | 16h |
| 51 | 1.7.1.1.1 | Aplicación de Pruebas | 1.5d | 2016-09-21 15:00 | 2016-09-23 10:00 |  | 0d |  | Usuarios Funcionales - BCR | 12h |
| 52 | 1.7.1.1.2 | Ajustes/Pruebas | 0.5d | 2016-09-23 10:00 | 2016-09-23 15:00 | 51 | 0d |  | Arnoldo Martinelli - GMAS | 4h |

| ID | WBS | Task | Type | Duration | Start | Finish | Predecessors | Total slack | Constraint | Resources | Work |
| --- | --- | --- | --- | --- | --- | --- | --- | --- | --- | --- | --- |
| 53 | 1.7.1.2 | **Iteración 2** |  | 0.75d | 2016-09-23 15:00 | 2016-09-26 12:00 | 50 | 0d |  |  | 8h |
| 54 | 1.7.1.2.1 | Pase a pruebas |  | 2h | 2016-09-23 15:00 | 2016-09-23 17:00 |  | 0d |  | Arnoldo Martinelli - GMAS; Equipo TI - BCR | 4h |
| 55 | 1.7.1.2.2 | Ejecución de pruebas y documentación |  | 0.5d | 2016-09-26 08:00 | 2016-09-26 12:00 | 54 | 0d |  | Usuarios Funcionales - BCR | 4h |
| 56 | 1.8 | **Documentación** |  | 0.5d | 2016-09-26 13:00 | 2016-09-26 17:00 | 53 | 0d |  |  | 4h |
| 57 | 1.8.1 | Manual Técnico |  | 0.5d | 2016-09-26 13:00 | 2016-09-26 17:00 |  | 0d |  | Arnoldo Martinelli - GMAS | 4h |
| 58 | 1.9 | **Cierre** |  | 0.4d | 2016-09-27 08:00 | 2016-09-27 11:12 | 48, 56 | 0d |  |  | 6.8h |
| 59 | 1.9.1 | Preparación de Control Horas e Informe |  | 2h | 2016-09-27 08:00 | 2016-09-27 10:00 |  | 0d |  | Gabriela Dittel - GMAS | 2h |
| 60 | 1.9.2 | Revisión de Documentos y Cierre |  | 1.2h | 2016-09-27 10:00 | 2016-09-27 11:12 | 59 | 0d |  | Equipo Negocio - BCR; Equipo QA - BCR; Equipo TI - BCR; Gabriela Dittel - GMAS | 4.8h |
| 62 | 1.10 | **Administración de Proyecto** |  | 21.12d | 2016-08-18 08:00 | 2016-09-19 09:00 |  | 0d |  |  | 19h |
| 63 | 1.10.1 | **Labores de gestión (atención cliente, correos, controles de cambio)** |  | 21.12d | 2016-08-18 08:00 | 2016-09-19 09:00 |  | 0d |  |  | 9h |
| 64 | 1.10.1.1 | Labores de gestión (atención cliente, correos, controles de cambio) 1 | manual | 1h | 2016-08-18 08:00 | 2016-08-18 09:00 |  |  | start no earlier than 2016-08-18 08:00 | Gabriela Dittel - GMAS | 1h |
| 65 | 1.10.1.2 | Labores de gestión (atención cliente, correos, controles de cambio) 2 | manual | 1h | 2016-08-22 08:00 | 2016-08-22 09:00 |  |  | start no earlier than 2016-08-22 08:00 | Gabriela Dittel - GMAS | 1h |
| 66 | 1.10.1.3 | Labores de gestión (atención cliente, correos, controles de cambio) 3 | manual | 1h | 2016-08-25 08:00 | 2016-08-25 09:00 |  |  | start no earlier than 2016-08-25 08:00 | Gabriela Dittel - GMAS | 1h |
| 67 | 1.10.1.4 | Labores de gestión (atención cliente, correos, controles de cambio) 4 | manual | 1h | 2016-08-29 08:00 | 2016-08-29 09:00 |  |  | start no earlier than 2016-08-29 08:00 | Gabriela Dittel - GMAS | 1h |
| 68 | 1.10.1.5 | Labores de gestión (atención cliente, correos, controles de cambio) 5 | manual | 1h | 2016-09-01 08:00 | 2016-09-01 09:00 |  |  | start no earlier than 2016-09-01 08:00 | Gabriela Dittel - GMAS | 1h |
| 69 | 1.10.1.6 | Labores de gestión (atención cliente, correos, controles de cambio) 6 | manual | 1h | 2016-09-05 08:00 | 2016-09-05 09:00 |  |  | start no earlier than 2016-09-05 08:00 | Gabriela Dittel - GMAS | 1h |
| 70 | 1.10.1.7 | Labores de gestión (atención cliente, correos, controles de cambio) 7 | manual | 1h | 2016-09-08 08:00 | 2016-09-08 09:00 |  |  | start no earlier than 2016-09-08 08:00 | Gabriela Dittel - GMAS | 1h |
| 71 | 1.10.1.8 | Labores de gestión (atención cliente, correos, controles de cambio) 8 | manual | 1h | 2016-09-12 08:00 | 2016-09-12 09:00 |  |  | start no earlier than 2016-09-12 08:00 | Gabriela Dittel - GMAS | 1h |
| 72 | 1.10.1.9 | Labores de gestión (atención cliente, correos, controles de cambio) 9 | manual | 1h | 2016-09-19 08:00 | 2016-09-19 09:00 |  |  | start no earlier than 2016-09-19 08:00 | Gabriela Dittel - GMAS | 1h |
| 73 | 1.10.2 | **Actualización cronograma** |  | 10.12d | 2016-08-31 08:00 | 2016-09-14 09:00 |  | 0d |  |  | 2h |
| 74 | 1.10.2.1 | Actualización cronograma 1 | manual | 1h | 2016-08-31 08:00 | 2016-08-31 09:00 |  |  | start no earlier than 2016-08-31 08:00 | Gabriela Dittel - GMAS | 1h |
| 75 | 1.10.2.2 | Actualización cronograma 2 | manual | 1h | 2016-09-14 08:00 | 2016-09-14 09:00 |  |  | start no earlier than 2016-09-14 08:00 | Gabriela Dittel - GMAS | 1h |
| 76 | 1.10.3 | **Preparación informe de avance** |  | 10.12d | 2016-08-31 08:00 | 2016-09-14 09:00 |  | 0d |  |  |  |
| 77 | 1.10.3.1 | Preparación informe de avance 1 | manual | 1h | 2016-08-31 08:00 | 2016-08-31 09:00 |  |  | start no earlier than 2016-08-31 08:00 |  |  |
| 78 | 1.10.3.2 | Preparación informe de avance 2 | manual | 1h | 2016-09-14 08:00 | 2016-09-14 09:00 |  |  | start no earlier than 2016-09-14 08:00 |  |  |

| ID | WBS | Task | Type | Duration | Start | Finish | Total slack | Constraint | Calendar | Resources | Work |
| --- | --- | --- | --- | --- | --- | --- | --- | --- | --- | --- | --- |
| 79 | 1.10.4 | **Actualización control de horas** |  | 10.12d | 2016-08-31 08:00 | 2016-09-14 09:00 | 0d |  |  |  | 2h |
| 80 | 1.10.4.1 | Actualización control de horas 1 | manual | 1h | 2016-08-31 08:00 | 2016-08-31 09:00 |  | start no earlier than 2016-08-31 08:00 |  | Gabriela Dittel - GMAS | 1h |
| 81 | 1.10.4.2 | Actualización control de horas 2 | manual | 1h | 2016-09-14 08:00 | 2016-09-14 09:00 |  | start no earlier than 2016-09-14 08:00 |  | Gabriela Dittel - GMAS | 1h |
| 82 | 1.10.5 | **Sesión Seguimiento Proyecto** |  | 10.12d | 2016-09-01 08:00 | 2016-09-15 09:00 | 0d |  | Estándar |  | 6h |
| 83 | 1.10.5.1 | Sesión Seguimiento Proyecto 1 | manual | 1h | 2016-09-01 08:00 | 2016-09-01 09:00 |  | start no earlier than 2016-09-01 08:00 | Estándar | Equipo Negocio - BCR; Equipo TI - BCR; Gabriela Dittel - GMAS | 3h |
| 84 | 1.10.5.2 | Sesión Seguimiento Proyecto 2 | manual | 1h | 2016-09-15 08:00 | 2016-09-15 09:00 |  | start no earlier than 2016-09-15 08:00 | Estándar | Equipo Negocio - BCR; Equipo TI - BCR; Gabriela Dittel - GMAS | 3h |
