# CC-01_BCR-SIG-001_20160413 - Sprints 3-4-5

Schedule from MS Project, 2016-08-16 to 2016-09-19, A marks actual dates.

## Calendars

- Standard: Mon-Fri 08:00-12:00, 13:00-17:00; Sat-Sun off. Exceptions (off unless hours are given): 2016-09-15 (Día de la Independencia).
- Estándar: Mon-Fri 08:00-12:00, 13:00-17:00; Sat-Sun off.

## Resources

| Resource |
| --- |
| Stephanie Barahona - GMAS |
| Gabriela Dittel - GMAS |
| Ulises Rivera - GMAS |
| Alexander Cruz - GMAS |
| Equipo Negocio - BCR |
| Equipo TI - BCR |
| Equipo QA - BCR |
| Víctor Zúñiga - GMAS |
| Usuarios Funcionales - BCR |
| Vladimir Guzmán - GMAS |
| Mario Murillo - GMAS |
| Arnoldo Martinelli - GMAS |

## Schedule

| ID | WBS | Task | Type | Duration | Start | Finish | Predecessors | Complete | Remaining | Total slack | Free slack | Constraint | Resources | Work | Actual work |
| --- | --- | --- | --- | --- | --- | --- | --- | --- | --- | --- | --- | --- | --- | --- | --- |
| 1 | 1 | **SIGANEM Bloque 01 - Fase 02 - Sprint 5 RQ_MANT_2016050410580724_Backlog_3943** |  | 23.12d | 2016-08-16 08:00 A | 2016-09-19 09:00 |  | 14% | 19.96d | 0d |  |  |  | 258h | 35.6h |
| 2 | 1.1 | Preparación de Propuesta y Plan de Trabajo |  | 2.5d | 2016-08-16 08:00 A | 2016-08-18 12:00 A |  | 100% |  |  |  | start no earlier than 2016-08-16 08:00 | Stephanie Barahona - GMAS [20%]; Gabriela Dittel - GMAS; Alexander Cruz - GMAS [20%]; Arnoldo Martinelli - GMAS | 20h | 20h |
| 3 | 1.2 | **Análisis Requisitos del Sistema** |  | 0.25d | 2016-08-22 13:00 A | 2016-08-22 15:00 A |  | 100% |  |  |  |  |  | 6h | 6h |
| 4 | 1.2.1 | Validar y Evaluar Detalle los Requisitos del Sistema (RFP) |  | 2h | 2016-08-22 13:00 A | 2016-08-22 15:00 A | 2FS+2d | 100% |  |  |  |  | Stephanie Barahona - GMAS; Alexander Cruz - GMAS; Arnoldo Martinelli - GMAS | 6h | 6h |
| 5 | 1.3 | **Diseño** |  | 5.62d | 2016-08-22 15:00 A | 2016-08-30 11:00 |  | 18% | 4.61d | 0.6d | 0d |  |  | 63.4h | 9.6h |
| 6 | 1.3.1 | **Funcional** |  | 5.62d | 2016-08-22 15:00 A | 2016-08-30 11:00 |  | 18% | 4.61d | 0.6d |  |  |  | 63.4h | 9.6h |
| 7 | 1.3.1.1 | **Definición Propuesta Diseño** |  | 3.12d | 2016-08-22 15:00 A | 2016-08-25 16:00 | 3 | 35% | 2.02d | 3.1d |  |  |  | 27.4h | 9.6h |
| 8 | 1.3.1.1.1 | **Diseño del requerimiento funcional** |  | 2.12d | 2016-08-22 15:00 A | 2016-08-24 16:00 |  | 52% | 1.02d | 0.6d | 0d |  |  | 18.6h | 9.6h |
| 9 | 1.3.1.1.1.1 | Ajuste de pantalla de relación entre Garantías Reales y Fideicomisos |  | 1d | 2016-08-22 15:00 A | 2016-08-23 15:00 |  | 50% | 0.5d | 0.5d | 0d |  | Stephanie Barahona - GMAS [10%]; Arnoldo Martinelli - GMAS | 8.8h | 4.4h |
| 10 | 1.3.1.1.1.2 | Ajuste al proceso de cálculo del Monto Grado Gravamen |  | 1d | 2016-08-23 15:00 A | 2016-08-24 15:00 | 9 | 50% | 0.5d | 0.6d | 0d |  | Stephanie Barahona - GMAS [10%]; Arnoldo Martinelli - GMAS | 8.8h | 4.4h |
| 11 | 1.3.1.1.1.3 | Preparación de fórmula en Excel |  | 1h | 2016-08-24 15:00 A | 2016-08-24 16:00 | 10 | 80% | 0.2h | 0.6d |  |  | Arnoldo Martinelli - GMAS | 1h | 0.8h |
| 12 | 1.3.1.1.2 | **Definición diseño técnico** |  | 1d | 2016-08-24 16:00 | 2016-08-25 16:00 | 8 |  |  | 0.6d | 0d |  |  | 8.8h |  |
| 13 | 1.3.1.1.2.1 | Ajuste de pantalla de relación entre Garantías Reales y Fideicomisos |  | 0.5d | 2016-08-24 16:00 | 2016-08-25 11:00 |  |  |  | 0.6d | 0d |  | Alexander Cruz - GMAS [10%]; Arnoldo Martinelli - GMAS | 4.4h |  |
| 14 | 1.3.1.1.2.2 | Ajuste al proceso de cálculo del Monto Grado Gravamen |  | 0.5d | 2016-08-25 11:00 | 2016-08-25 16:00 | 13 |  |  | 0.6d | 0d |  | Alexander Cruz - GMAS [10%]; Arnoldo Martinelli - GMAS | 4.4h |  |
| 15 | 1.3.1.1.3 | Entrega documento diseño funcional y técnico | milestone | 0d | 2016-08-25 16:00 | 2016-08-25 16:00 | 14 |  |  | 3.1d |  |  | Arnoldo Martinelli - GMAS |  |  |
| 16 | 1.3.1.2 | Revisión de propuesta con área de negocio |  | 1d | 2016-08-25 16:00 | 2016-08-26 16:00 | 8, 12 |  |  | 0.6d | 0d |  | Equipo Negocio - BCR; Equipo TI - BCR | 16h |  |
| 17 | 1.3.1.3 | Ajustes documento de diseño funcional y técnico |  | 0.5d | 2016-08-26 16:00 | 2016-08-29 11:00 | 16 |  |  | 0.6d | 0d |  | Arnoldo Martinelli - GMAS | 4h |  |
| 18 | 1.3.1.4 | Entrega documento diseño final | milestone | 0d | 2016-08-29 11:00 | 2016-08-29 11:00 | 17 |  |  | 0.6d | 0d |  | Arnoldo Martinelli - GMAS |  |  |
| 19 | 1.3.1.5 | Revisión Final Area Negocio |  | 0.5d | 2016-08-29 11:00 | 2016-08-29 16:00 | 18 |  |  | 0.6d | 0d |  | Equipo Negocio - BCR; Equipo QA - BCR | 8h |  |
| 20 | 1.3.1.6 | Revisión Final TI |  | 0.5d | 2016-08-29 11:00 | 2016-08-29 16:00 | 18 |  |  | 0.6d | 0d |  | Equipo TI - BCR | 4h |  |
| 21 | 1.3.1.7 | Ajustes por Revisión |  | 0.5d | 2016-08-29 16:00 | 2016-08-30 11:00 | 19, 20 |  |  | 0.6d | 0d |  | Arnoldo Martinelli - GMAS | 4h |  |
| 22 | 1.3.1.8 | Aprobación Diseño Funcional y Técnico | milestone | 0d | 2016-08-30 11:00 | 2016-08-30 11:00 | 21 |  |  | 0.6d |  |  | Equipo Negocio - BCR; Equipo QA - BCR; Equipo TI - BCR; Gabriela Dittel - GMAS; Stephanie Barahona - GMAS |  |  |
| 23 | 1.4 | **Desarrollo** |  | 3d | 2016-08-30 11:00 | 2016-09-02 11:00 | 5 |  |  | 0.6d | 0d |  |  | 26.4h |  |
| 24 | 1.4.1 | Ajuste de pantalla de relación entre Garantías Reales y Fideicomisos |  | 1d | 2016-08-30 11:00 | 2016-08-31 11:00 |  |  |  | 0.6d | 0d |  | Arnoldo Martinelli - GMAS; Alexander Cruz - GMAS [10%] | 8.8h |  |
| 25 | 1.4.2 | Ajuste al proceso de cálculo del Monto Grado Gravamen |  | 2d | 2016-08-31 11:00 | 2016-09-02 11:00 | 24 |  |  | 0.6d |  |  | Arnoldo Martinelli - GMAS; Alexander Cruz - GMAS [10%] | 17.6h |  |

Notes:
- 2: Contempla medio día invertido en la reunión de metodología que tuve y luego la que se realizó con Luis

| ID | WBS | Task | Duration | Start | Finish | Predecessors | Total slack | Free slack | Resources | Work |
| --- | --- | --- | --- | --- | --- | --- | --- | --- | --- | --- |
| 26 | 1.5 | **Pruebas Funcionales** | 8d | 2016-08-25 16:00 | 2016-09-06 16:00 | 12 | 0.6d | 0d |  | 28.4h |
| 27 | 1.5.1 | Generación de Scripts de Pruebas | 1d | 2016-08-25 16:00 | 2016-08-26 16:00 |  | 7.6d |  | Arnoldo Martinelli - GMAS | 8h |
| 28 | 1.5.2 | **Iteración 1** | 2d | 2016-09-02 11:00 | 2016-09-06 11:00 | 23 | 0.6d | 0d |  | 16.4h |
| 29 | 1.5.2.1 | Aplicación de Pruebas | 1.5d | 2016-09-02 11:00 | 2016-09-05 16:00 |  | 0.6d | 0d | Arnoldo Martinelli - GMAS | 12h |
| 30 | 1.5.2.2 | Ajustes sobre PNS | 0.5d | 2016-09-05 16:00 | 2016-09-06 11:00 | 29 | 0.6d |  | Arnoldo Martinelli - GMAS; Alexander Cruz - GMAS [10%] | 4.4h |
| 31 | 1.5.3 | **Iteración 2** | 0.5d | 2016-09-06 11:00 | 2016-09-06 16:00 | 28 | 0.6d |  |  | 4h |
| 32 | 1.5.3.1 | Aplicación de Pruebas | 0.5d | 2016-09-06 11:00 | 2016-09-06 16:00 |  | 0.6d |  | Arnoldo Martinelli - GMAS | 4h |
| 33 | 1.6 | **Pruebas de QA** | 7.5d | 2016-08-31 11:00 | 2016-09-09 16:00 | 23FS-2d | 0.6d | 0d |  | 60h |
| 34 | 1.6.1 | Generación de Scripts de Pruebas | 4d | 2016-08-31 11:00 | 2016-09-06 11:00 |  | 1.35d | 0.75d | Equipo QA - BCR | 32h |
| 35 | 1.6.2 | **Iteración 1** | 2.25d | 2016-09-06 16:00 | 2016-09-09 09:00 | 26 | 0.6d | 0d |  | 20h |
| 36 | 1.6.2.1 | Generacion de Pase | 2h | 2016-09-06 16:00 | 2016-09-07 09:00 |  | 0.6d | 0d | Arnoldo Martinelli - GMAS; Equipo TI - BCR | 4h |
| 37 | 1.6.2.2 | Aplicación de Pruebas | 1.5d | 2016-09-07 09:00 | 2016-09-08 14:00 | 36, 34 | 0.6d | 0d | Equipo QA - BCR | 12h |
| 38 | 1.6.2.3 | Ajustes sobre PNS | 0.5d | 2016-09-08 14:00 | 2016-09-09 09:00 | 37 | 0.6d |  | Arnoldo Martinelli - GMAS | 4h |
| 39 | 1.6.3 | **Iteración 2** | 0.75d | 2016-09-09 09:00 | 2016-09-09 16:00 |  | 0.6d |  |  | 8h |
| 40 | 1.6.3.1 | Generacion de Pase | 2h | 2016-09-09 09:00 | 2016-09-09 11:00 | 35 | 0.6d | 0d | Arnoldo Martinelli - GMAS; Equipo TI - BCR | 4h |
| 41 | 1.6.3.2 | Aplicación de Pruebas | 0.5d | 2016-09-09 11:00 | 2016-09-09 16:00 | 40 | 0.6d |  | Equipo QA - BCR | 4h |
| 42 | 1.7 | **Pruebas de Usuario** | 2.75d | 2016-09-09 16:00 | 2016-09-14 14:00 | 33 | 0.6d | 0.5d |  | 24h |
| 43 | 1.7.1 | **Ejecución de Pruebas** | 2.75d | 2016-09-09 16:00 | 2016-09-14 14:00 |  | 0.6d |  |  | 24h |
| 44 | 1.7.1.1 | **Iteración 1** | 2d | 2016-09-09 16:00 | 2016-09-13 16:00 |  | 0.6d | 0d |  | 16h |
| 45 | 1.7.1.1.1 | Aplicación de Pruebas | 1.5d | 2016-09-09 16:00 | 2016-09-13 11:00 |  | 0.6d | 0d | Usuarios Funcionales - BCR | 12h |
| 46 | 1.7.1.1.2 | Ajustes/Pruebas | 0.5d | 2016-09-13 11:00 | 2016-09-13 16:00 | 45 | 0.6d |  | Arnoldo Martinelli - GMAS | 4h |
| 47 | 1.7.1.2 | **Iteración 2** | 0.75d | 2016-09-13 16:00 | 2016-09-14 14:00 | 44 | 0.6d | 0d |  | 8h |
| 48 | 1.7.1.2.1 | Pase a pruebas | 2h | 2016-09-13 16:00 | 2016-09-14 09:00 |  | 0.6d | 0d | Arnoldo Martinelli - GMAS; Equipo TI - BCR | 4h |
| 49 | 1.7.1.2.2 | Ejecución de pruebas y documentación | 0.5d | 2016-09-14 09:00 | 2016-09-14 14:00 | 48 | 0.6d |  | Usuarios Funcionales - BCR | 4h |

| ID | WBS | Task | Type | Duration | Start | Finish | Predecessors | Total slack | Free slack | Constraint | Resources | Work |
| --- | --- | --- | --- | --- | --- | --- | --- | --- | --- | --- | --- | --- |
| 50 | 1.8 | **Documentación** |  | 0.5d | 2016-09-14 14:00 | 2016-09-16 09:00 | 47 | 0.6d | 0d |  |  | 4h |
| 51 | 1.8.1 | Manual Técnico |  | 0.5d | 2016-09-14 14:00 | 2016-09-16 09:00 |  | 0.6d |  |  | Arnoldo Martinelli - GMAS | 4h |
| 52 | 1.9 | **Cierre** |  | 0.4d | 2016-09-16 09:00 | 2016-09-16 13:12 | 42, 50 | 0.6d |  |  |  | 6.8h |
| 53 | 1.9.1 | Preparación de Control Horas e Informe |  | 2h | 2016-09-16 09:00 | 2016-09-16 11:00 |  | 0.6d | 0d |  | Gabriela Dittel - GMAS | 2h |
| 54 | 1.9.2 | Revisión de Documentos y Cierre |  | 1.2h | 2016-09-16 11:00 | 2016-09-16 13:12 | 53 | 0.6d |  |  | Equipo Negocio - BCR; Equipo QA - BCR; Equipo TI - BCR; Gabriela Dittel - GMAS | 4.8h |
| 56 | 1.10 | **Administración de Proyecto** |  | 21.12d | 2016-08-18 08:00 | 2016-09-19 09:00 |  | 0d |  |  |  | 19h |
| 57 | 1.10.1 | **Labores de gestión (atención cliente, correos, controles de cambio)** |  | 21.12d | 2016-08-18 08:00 | 2016-09-19 09:00 |  | 0d |  |  |  | 9h |
| 58 | 1.10.1.1 | Labores de gestión (atención cliente, correos, controles de cambio) 1 | manual | 1h | 2016-08-18 08:00 | 2016-08-18 09:00 |  |  |  | start no earlier than 2016-08-18 08:00 | Gabriela Dittel - GMAS | 1h |
| 59 | 1.10.1.2 | Labores de gestión (atención cliente, correos, controles de cambio) 2 | manual | 1h | 2016-08-22 08:00 | 2016-08-22 09:00 |  |  |  | start no earlier than 2016-08-22 08:00 | Gabriela Dittel - GMAS | 1h |
| 60 | 1.10.1.3 | Labores de gestión (atención cliente, correos, controles de cambio) 3 | manual | 1h | 2016-08-25 08:00 | 2016-08-25 09:00 |  |  |  | start no earlier than 2016-08-25 08:00 | Gabriela Dittel - GMAS | 1h |
| 61 | 1.10.1.4 | Labores de gestión (atención cliente, correos, controles de cambio) 4 | manual | 1h | 2016-08-29 08:00 | 2016-08-29 09:00 |  |  |  | start no earlier than 2016-08-29 08:00 | Gabriela Dittel - GMAS | 1h |
| 62 | 1.10.1.5 | Labores de gestión (atención cliente, correos, controles de cambio) 5 | manual | 1h | 2016-09-01 08:00 | 2016-09-01 09:00 |  |  |  | start no earlier than 2016-09-01 08:00 | Gabriela Dittel - GMAS | 1h |
| 63 | 1.10.1.6 | Labores de gestión (atención cliente, correos, controles de cambio) 6 | manual | 1h | 2016-09-05 08:00 | 2016-09-05 09:00 |  |  |  | start no earlier than 2016-09-05 08:00 | Gabriela Dittel - GMAS | 1h |
| 64 | 1.10.1.7 | Labores de gestión (atención cliente, correos, controles de cambio) 7 | manual | 1h | 2016-09-08 08:00 | 2016-09-08 09:00 |  |  |  | start no earlier than 2016-09-08 08:00 | Gabriela Dittel - GMAS | 1h |
| 65 | 1.10.1.8 | Labores de gestión (atención cliente, correos, controles de cambio) 8 | manual | 1h | 2016-09-12 08:00 | 2016-09-12 09:00 |  |  |  | start no earlier than 2016-09-12 08:00 | Gabriela Dittel - GMAS | 1h |
| 66 | 1.10.1.9 | Labores de gestión (atención cliente, correos, controles de cambio) 9 | manual | 1h | 2016-09-19 08:00 | 2016-09-19 09:00 |  |  |  | start no earlier than 2016-09-19 08:00 | Gabriela Dittel - GMAS | 1h |
| 67 | 1.10.2 | **Actualización cronograma** |  | 10.12d | 2016-08-31 08:00 | 2016-09-14 09:00 |  | 0d |  |  |  | 2h |
| 68 | 1.10.2.1 | Actualización cronograma 1 | manual | 1h | 2016-08-31 08:00 | 2016-08-31 09:00 |  |  |  | start no earlier than 2016-08-31 08:00 | Gabriela Dittel - GMAS | 1h |
| 69 | 1.10.2.2 | Actualización cronograma 2 | manual | 1h | 2016-09-14 08:00 | 2016-09-14 09:00 |  |  |  | start no earlier than 2016-09-14 08:00 | Gabriela Dittel - GMAS | 1h |
| 70 | 1.10.3 | **Preparación informe de avance** |  | 10.12d | 2016-08-31 08:00 | 2016-09-14 09:00 |  | 0d |  |  |  |  |
| 71 | 1.10.3.1 | Preparación informe de avance 1 | manual | 1h | 2016-08-31 08:00 | 2016-08-31 09:00 |  |  |  | start no earlier than 2016-08-31 08:00 |  |  |
| 72 | 1.10.3.2 | Preparación informe de avance 2 | manual | 1h | 2016-09-14 08:00 | 2016-09-14 09:00 |  |  |  | start no earlier than 2016-09-14 08:00 |  |  |
| 73 | 1.10.4 | **Actualización control de horas** |  | 10.12d | 2016-08-31 08:00 | 2016-09-14 09:00 |  | 0d |  |  |  | 2h |
| 74 | 1.10.4.1 | Actualización control de horas 1 | manual | 1h | 2016-08-31 08:00 | 2016-08-31 09:00 |  |  |  | start no earlier than 2016-08-31 08:00 | Gabriela Dittel - GMAS | 1h |
| 75 | 1.10.4.2 | Actualización control de horas 2 | manual | 1h | 2016-09-14 08:00 | 2016-09-14 09:00 |  |  |  | start no earlier than 2016-09-14 08:00 | Gabriela Dittel - GMAS | 1h |

| ID | WBS | Task | Type | Duration | Start | Finish | Total slack | Constraint | Calendar | Resources | Work |
| --- | --- | --- | --- | --- | --- | --- | --- | --- | --- | --- | --- |
| 76 | 1.10.5 | **Sesión Seguimiento Proyecto** |  | 10.12d | 2016-09-01 08:00 | 2016-09-15 09:00 | 0d |  | Estándar |  | 6h |
| 77 | 1.10.5.1 | Sesión Seguimiento Proyecto 1 | manual | 1h | 2016-09-01 08:00 | 2016-09-01 09:00 |  | start no earlier than 2016-09-01 08:00 | Estándar | Equipo Negocio - BCR; Equipo TI - BCR; Gabriela Dittel - GMAS | 3h |
| 78 | 1.10.5.2 | Sesión Seguimiento Proyecto 2 | manual | 1h | 2016-09-15 08:00 | 2016-09-15 09:00 |  | start no earlier than 2016-09-15 08:00 | Estándar | Equipo Negocio - BCR; Equipo TI - BCR; Gabriela Dittel - GMAS | 3h |
