# CC-01_BCR-SIG-001_20160829 - Sprint 6

Schedule from MS Project, 2016-08-29 to 2016-10-04.

## Calendars

- Standard: Mon-Fri 08:00-12:00, 13:00-17:00; Sat-Sun off. Exceptions (off unless hours are given): 2016-09-15 (Día de la Independencia).
- Estándar: Mon-Fri 08:00-12:00, 13:00-17:00; Sat-Sun off.

## Resources

| Resource |
| --- |
| Stephanie Barahona - GMAS |
| Gabriela Dittel - GMAS |
| Ulises Rivera - GMAS |
| Alexander Cruz - GMAS |
| Equipo Negocio - BCR |
| Equipo TI - BCR |
| Equipo QA - BCR |
| Víctor Zúñiga - GMAS |
| Usuarios Funcionales - BCR |
| Vladimir Guzmán - GMAS |
| Mario Murillo - GMAS |
| Arnoldo Martinelli - GMAS |

## Schedule

| ID | WBS | Task | Type | Duration | Start | Finish | Predecessors | Total slack | Constraint | Resources | Work |
| --- | --- | --- | --- | --- | --- | --- | --- | --- | --- | --- | --- |
| 1 | 1 | **SIGANEM Bloque 01 - Fase 02 - Sprint 6** |  | 25.52d | 2016-08-29 08:00 | 2016-10-04 13:12 |  | 0d |  |  | 273.2h |
| 2 | 1.1 | Preparación de Propuesta y Plan de Trabajo |  | 5h | 2016-08-29 08:00 | 2016-08-29 14:00 |  | 0d | start no earlier than 2016-08-29 08:00 | Alexander Cruz - GMAS [50%]; Arnoldo Martinelli - GMAS [50%]; Stephanie Barahona - GMAS [90%]; Gabriela Dittel - GMAS | 14.5h |
| 3 | 1.2 | **Análisis Requisitos del Sistema** |  | 0.25d | 2016-09-02 14:00 | 2016-09-02 16:00 | 2FS+4d | 0d |  |  | 6h |
| 4 | 1.2.1 | Validar y Evaluar Detalle los Requisitos del Sistema (RFP) |  | 2h | 2016-09-02 14:00 | 2016-09-02 16:00 |  | 0d |  | Stephanie Barahona - GMAS; Alexander Cruz - GMAS; Arnoldo Martinelli - GMAS | 6h |
| 5 | 1.3 | **Diseño** |  | 4d | 2016-09-07 16:00 | 2016-09-13 16:00 |  | 0d |  |  | 66.9h |
| 6 | 1.3.1 | **Definición Propuesta Diseño** |  | 1.75d | 2016-09-07 16:00 | 2016-09-09 14:00 | 3FS+3d | 0d |  |  | 26.9h |
| 7 | 1.3.1.1 | **Diseño del requerimiento funcional** |  | 1.75d | 2016-09-07 16:00 | 2016-09-09 14:00 |  | 0d |  |  | 18.9h |
| 8 | 1.3.1.1.1 | Ajustes: Cálculo Monto Tasación, Cálculo Porcentaje Aceptación, Cálculo Porcentaje Responsabilidad |  | 1d | 2016-09-07 16:00 | 2016-09-08 16:00 |  | 0d |  | Arnoldo Martinelli - GMAS; Stephanie Barahona - GMAS [35%] | 10.8h |
| 9 | 1.3.1.1.2 | Preparación de fórmula en Excel |  | 0.75d | 2016-09-08 16:00 | 2016-09-09 14:00 | 8 | 0d |  | Arnoldo Martinelli - GMAS; Stephanie Barahona - GMAS [35%] | 8.1h |
| 10 | 1.3.1.2 | **Definición diseño técnico** |  | 1d | 2016-09-07 16:00 | 2016-09-08 16:00 |  | 0.75d |  |  | 8h |
| 11 | 1.3.1.2.1 | Ajustes: Cálculo Monto Tasación, Cálculo Porcentaje Aceptación, Cálculo Porcentaje Responsabilidad |  | 1d | 2016-09-07 16:00 | 2016-09-08 16:00 | 3FS+3d | 0.75d |  | Alexander Cruz - GMAS | 8h |
| 12 | 1.3.1.3 | Entrega documento diseño funcional y técnico | milestone | 0d | 2016-09-09 14:00 | 2016-09-09 14:00 | 7, 10 | 0d |  | Alexander Cruz - GMAS |  |
| 13 | 1.3.2 | Revisión de propuesta con área de negocio |  | 1d | 2016-09-09 14:00 | 2016-09-12 14:00 | 12 | 0d |  | Equipo Negocio - BCR; Equipo TI - BCR; Arnoldo Martinelli - GMAS [50%] | 20h |
| 14 | 1.3.3 | Ajustes documento de diseño funcional y técnico |  | 0.5d | 2016-09-12 14:00 | 2016-09-13 09:00 | 13 | 0d |  | Arnoldo Martinelli - GMAS | 4h |
| 15 | 1.3.4 | Entrega documento diseño final | milestone | 0d | 2016-09-13 09:00 | 2016-09-13 09:00 | 14 | 0d |  | Arnoldo Martinelli - GMAS |  |
| 16 | 1.3.5 | Revisión Final Area Negocio |  | 0.5d | 2016-09-13 09:00 | 2016-09-13 14:00 | 15 | 0d |  | Equipo Negocio - BCR; Equipo TI - BCR | 8h |
| 17 | 1.3.6 | Revisión Final TI |  | 0.5d | 2016-09-13 09:00 | 2016-09-13 14:00 | 15 | 0d |  | Equipo TI - BCR | 4h |
| 18 | 1.3.7 | Ajustes por Revisión |  | 0.25d | 2016-09-13 14:00 | 2016-09-13 16:00 | 16, 17 | 0d |  | Arnoldo Martinelli - GMAS; Alexander Cruz - GMAS | 4h |
| 19 | 1.3.8 | Aprobación Diseño Funcional y Técnico | milestone | 0d | 2016-09-13 16:00 | 2016-09-13 16:00 | 18 | 0d |  | Equipo Negocio - BCR; Equipo QA - BCR; Equipo TI - BCR; Gabriela Dittel - GMAS; Stephanie Barahona - GMAS |  |
| 20 | 1.4 | **Desarrollo** |  | 3d | 2016-09-13 16:00 | 2016-09-19 16:00 | 5 | 0d |  |  | 24h |
| 21 | 1.4.1 | Ajuste en Cálculo Monto Tasación |  | 1d | 2016-09-13 16:00 | 2016-09-14 16:00 |  | 0d |  | Alexander Cruz - GMAS | 8h |
| 22 | 1.4.2 | Ajuste en Cálculo Porcentaje Aceptación |  | 1d | 2016-09-14 16:00 | 2016-09-16 16:00 | 21 | 0d |  | Alexander Cruz - GMAS | 8h |
| 23 | 1.4.3 | Ajuste en Cálculo Porcentaje Responsabilidad |  | 1d | 2016-09-16 16:00 | 2016-09-19 16:00 | 22 | 0d |  | Alexander Cruz - GMAS | 8h |
| 24 | 1.5 | **Pruebas Funcionales** |  | 6.5d | 2016-09-13 16:00 | 2016-09-23 11:00 | 5 | 0d |  |  | 40h |
| 25 | 1.5.1 | Generación de Scripts de Pruebas |  | 1.5d | 2016-09-13 16:00 | 2016-09-16 11:00 |  | 1.5d |  | Arnoldo Martinelli - GMAS | 12h |

Notes:
- 2: Contempla medio día invertido en la reunión de metodología que tuve y luego la que se realizó con Luis

| ID | WBS | Task | Duration | Start | Finish | Predecessors | Total slack | Resources | Work |
| --- | --- | --- | --- | --- | --- | --- | --- | --- | --- |
| 26 | 1.5.2 | **Iteración 1** | 3d | 2016-09-19 16:00 | 2016-09-22 16:00 | 20, 25 | 0d |  | 24h |
| 27 | 1.5.2.1 | Aplicación de Pruebas | 2.5d | 2016-09-19 16:00 | 2016-09-22 11:00 |  | 0d | Arnoldo Martinelli - GMAS | 20h |
| 28 | 1.5.2.2 | Ajustes sobre PNS | 0.5d | 2016-09-22 11:00 | 2016-09-22 16:00 | 27 | 0d | Alexander Cruz - GMAS | 4h |
| 29 | 1.5.3 | **Iteración 2** | 0.5d | 2016-09-22 16:00 | 2016-09-23 11:00 | 26 | 0d |  | 4h |
| 30 | 1.5.3.1 | Aplicación de Pruebas | 0.5d | 2016-09-22 16:00 | 2016-09-23 11:00 |  | 0d | Arnoldo Martinelli - GMAS | 4h |
| 31 | 1.6 | **Pruebas de QA** | 9d | 2016-09-14 16:00 | 2016-09-28 16:00 | 20FS-2d | 0d |  | 64h |
| 32 | 1.6.1 | Generación de Scripts de Pruebas | 4d | 2016-09-14 16:00 | 2016-09-21 16:00 |  | 1.25d | Equipo QA - BCR | 32h |
| 33 | 1.6.2 | **Iteración 1** | 2.75d | 2016-09-23 11:00 | 2016-09-28 09:00 | 24 | 0d |  | 24h |
| 34 | 1.6.2.1 | Generacion de Pase | 2h | 2016-09-23 11:00 | 2016-09-23 14:00 |  | 0d | Arnoldo Martinelli - GMAS; Equipo TI - BCR | 4h |
| 35 | 1.6.2.2 | Aplicación de Pruebas | 2d | 2016-09-23 14:00 | 2016-09-27 14:00 | 34, 32 | 0d | Equipo QA - BCR | 16h |
| 36 | 1.6.2.3 | Ajustes sobre PNS | 0.5d | 2016-09-27 14:00 | 2016-09-28 09:00 | 35 | 0d | Arnoldo Martinelli - GMAS | 4h |
| 37 | 1.6.3 | **Iteración 2** | 0.75d | 2016-09-28 09:00 | 2016-09-28 16:00 |  | 0d |  | 8h |
| 38 | 1.6.3.1 | Generacion de Pase | 2h | 2016-09-28 09:00 | 2016-09-28 11:00 | 33 | 0d | Arnoldo Martinelli - GMAS; Equipo TI - BCR | 4h |
| 39 | 1.6.3.2 | Aplicación de Pruebas | 0.5d | 2016-09-28 11:00 | 2016-09-28 16:00 | 38 | 0d | Equipo QA - BCR | 4h |
| 40 | 1.7 | **Pruebas de Usuario** | 3.25d | 2016-09-28 16:00 | 2016-10-04 09:00 | 31 | 0d |  | 28h |
| 41 | 1.7.1 | **Ejecución de Pruebas** | 3.25d | 2016-09-28 16:00 | 2016-10-04 09:00 |  | 0d |  | 28h |
| 42 | 1.7.1.1 | **Iteración 1** | 2.5d | 2016-09-28 16:00 | 2016-10-03 11:00 |  | 0d |  | 20h |
| 43 | 1.7.1.1.1 | Aplicación de Pruebas | 2d | 2016-09-28 16:00 | 2016-09-30 16:00 |  | 0d | Usuarios Funcionales - BCR | 16h |
| 44 | 1.7.1.1.2 | Ajustes/Pruebas | 0.5d | 2016-09-30 16:00 | 2016-10-03 11:00 | 43 | 0d | Arnoldo Martinelli - GMAS | 4h |
| 45 | 1.7.1.2 | **Iteración 2** | 0.75d | 2016-10-03 11:00 | 2016-10-04 09:00 | 42 | 0d |  | 8h |
| 46 | 1.7.1.2.1 | Pase a pruebas | 2h | 2016-10-03 11:00 | 2016-10-03 14:00 |  | 0d | Arnoldo Martinelli - GMAS; Equipo TI - BCR | 4h |
| 47 | 1.7.1.2.2 | Ejecución de pruebas y documentación | 0.5d | 2016-10-03 14:00 | 2016-10-04 09:00 | 46 | 0d | Usuarios Funcionales - BCR | 4h |
| 48 | 1.8 | **Documentación** | 0.5d | 2016-10-03 14:00 | 2016-10-04 09:00 | 46 | 0d |  | 4h |
| 49 | 1.8.1 | Manual Técnico | 0.5d | 2016-10-03 14:00 | 2016-10-04 09:00 |  | 0d | Arnoldo Martinelli - GMAS | 4h |

| ID | WBS | Task | Type | Duration | Start | Finish | Predecessors | Total slack | Constraint | Resources | Work |
| --- | --- | --- | --- | --- | --- | --- | --- | --- | --- | --- | --- |
| 50 | 1.9 | **Cierre** |  | 0.4d | 2016-10-04 09:00 | 2016-10-04 13:12 | 40, 48 | 0d |  |  | 6.8h |
| 51 | 1.9.1 | Preparación de Control Horas e Informe |  | 2h | 2016-10-04 09:00 | 2016-10-04 11:00 |  | 0d |  | Gabriela Dittel - GMAS | 2h |
| 52 | 1.9.2 | Revisión de Documentos y Cierre |  | 1.2h | 2016-10-04 11:00 | 2016-10-04 13:12 | 51 | 0d |  | Equipo Negocio - BCR; Equipo QA - BCR; Equipo TI - BCR; Gabriela Dittel - GMAS | 4.8h |
| 54 | 1.10 | **Administración de Proyecto** |  | 22.12d | 2016-08-31 08:00 | 2016-10-03 09:00 |  | 1.4d |  |  | 19h |
| 55 | 1.10.1 | **Labores de gestión (atención cliente, correos, controles de cambio)** |  | 19.12d | 2016-09-05 08:00 | 2016-10-03 09:00 |  | 1.4d |  |  | 9h |
| 56 | 1.10.1.1 | Labores de gestión (atención cliente, correos, controles de cambio) 1 |  | 1h | 2016-09-05 08:00 | 2016-09-05 09:00 |  | 19.9d | start no earlier than 2016-09-05 08:00 | Gabriela Dittel - GMAS | 1h |
| 57 | 1.10.1.2 | Labores de gestión (atención cliente, correos, controles de cambio) 2 |  | 1h | 2016-09-08 08:00 | 2016-09-08 09:00 |  | 16.9d | start no earlier than 2016-09-08 08:00 | Gabriela Dittel - GMAS | 1h |
| 58 | 1.10.1.3 | Labores de gestión (atención cliente, correos, controles de cambio) 3 |  | 1h | 2016-09-12 08:00 | 2016-09-12 09:00 |  | 14.9d | start no earlier than 2016-09-12 08:00 | Gabriela Dittel - GMAS | 1h |
| 59 | 1.10.1.4 | Labores de gestión (atención cliente, correos, controles de cambio) 4 |  | 1h | 2016-09-16 08:00 | 2016-09-16 09:00 |  | 11.9d | start no earlier than 2016-09-15 08:00 | Gabriela Dittel - GMAS | 1h |
| 60 | 1.10.1.5 | Labores de gestión (atención cliente, correos, controles de cambio) 5 |  | 1h | 2016-09-19 08:00 | 2016-09-19 09:00 |  | 10.9d | start no earlier than 2016-09-19 08:00 | Gabriela Dittel - GMAS | 1h |
| 61 | 1.10.1.6 | Labores de gestión (atención cliente, correos, controles de cambio) 6 |  | 1h | 2016-09-22 08:00 | 2016-09-22 09:00 |  | 7.9d | start no earlier than 2016-09-22 08:00 | Gabriela Dittel - GMAS | 1h |
| 62 | 1.10.1.7 | Labores de gestión (atención cliente, correos, controles de cambio) 7 |  | 1h | 2016-09-26 08:00 | 2016-09-26 09:00 |  | 5.9d | start no earlier than 2016-09-26 08:00 | Gabriela Dittel - GMAS | 1h |
| 63 | 1.10.1.8 | Labores de gestión (atención cliente, correos, controles de cambio) 8 | manual | 1h | 2016-09-29 08:00 | 2016-09-29 09:00 |  |  | start no earlier than 2016-09-29 08:00 | Gabriela Dittel - GMAS | 1h |
| 64 | 1.10.1.9 | Labores de gestión (atención cliente, correos, controles de cambio) 9 | manual | 1h | 2016-10-03 08:00 | 2016-10-03 09:00 |  |  | start no earlier than 2016-10-03 08:00 | Gabriela Dittel - GMAS | 1h |
| 65 | 1.10.2 | **Actualización cronograma** |  | 9.12d | 2016-09-07 08:00 | 2016-09-21 09:00 |  | 9.4d |  |  | 2h |
| 66 | 1.10.2.1 | Actualización cronograma 1 |  | 1h | 2016-09-07 08:00 | 2016-09-07 09:00 |  | 17.9d | start no earlier than 2016-09-07 08:00 | Gabriela Dittel - GMAS | 1h |
| 67 | 1.10.2.2 | Actualización cronograma 2 |  | 1h | 2016-09-21 08:00 | 2016-09-21 09:00 |  | 8.9d | start no earlier than 2016-09-21 08:00 | Gabriela Dittel - GMAS | 1h |
| 68 | 1.10.3 | **Preparación informe de avance** |  | 9.12d | 2016-09-07 08:00 | 2016-09-21 09:00 |  | 9.4d |  |  | 2h |
| 69 | 1.10.3.1 | Preparación informe de avance 1 |  | 1h | 2016-09-07 08:00 | 2016-09-07 09:00 |  | 17.9d | start no earlier than 2016-09-07 08:00 | Gabriela Dittel - GMAS | 1h |
| 70 | 1.10.3.2 | Preparación informe de avance 2 |  | 1h | 2016-09-21 08:00 | 2016-09-21 09:00 |  | 8.9d | start no earlier than 2016-09-21 08:00 | Gabriela Dittel - GMAS | 1h |
| 71 | 1.10.4 | **Actualización control de horas** |  | 19.12d | 2016-08-31 08:00 | 2016-09-28 09:00 |  | 4.4d |  |  | 3h |
| 72 | 1.10.4.1 | Actualización control de horas 1 |  | 1h | 2016-08-31 08:00 | 2016-08-31 09:00 |  | 22.9d | start no earlier than 2016-08-31 08:00 | Gabriela Dittel - GMAS | 1h |
| 73 | 1.10.4.2 | Actualización control de horas 2 |  | 1h | 2016-09-14 08:00 | 2016-09-14 09:00 |  | 12.9d | start no earlier than 2016-09-14 08:00 | Gabriela Dittel - GMAS | 1h |
| 74 | 1.10.4.3 | Actualización control de horas 3 | manual | 1h | 2016-09-28 08:00 | 2016-09-28 09:00 |  |  | start no earlier than 2016-09-28 08:00 | Gabriela Dittel - GMAS | 1h |

| ID | WBS | Task | Duration | Start | Finish | Total slack | Constraint | Calendar | Resources | Work |
| --- | --- | --- | --- | --- | --- | --- | --- | --- | --- | --- |
| 75 | 1.10.5 | **Sesión Seguimiento Proyecto** | 0.12d | 2016-09-29 08:00 | 2016-09-29 09:00 | 3.4d |  | Estándar |  | 3h |
| 76 | 1.10.5.1 | Sesión Seguimiento Proyecto 1 | 1h | 2016-09-29 08:00 | 2016-09-29 09:00 | 2.9d | start no earlier than 2016-09-29 08:00 | Estándar | Equipo Negocio - BCR; Equipo TI - BCR; Gabriela Dittel - GMAS | 3h |
