# CC-01_BCR-SIG-001_20160907 - Sprint 5

Schedule from MS Project, 2016-08-29 to 2016-10-04, costs in $.

## Calendars

- Standard: Mon-Fri 08:00-12:00, 13:00-17:00; Sat-Sun off. Exceptions (off unless hours are given): 2016-01-01 to 2025-01-01 (Anio Nuevo, recurring), 2016-04-11 to 2025-04-11 (Dia Batalla de Rivas, recurring), 2016-05-01 to 2025-05-01 (Dia del Trabajador, recurring), 2016-07-25 to 2025-07-25 (Dia de la Anexion, recurring), 2016-08-02 to 2025-08-02 (Dia de la Virgen, recurring), 2016-08-15 to 2025-08-15 (Dia de la Madre, recurring), 2016-09-15 to 2025-09-15 (Dia de la Independencia, recurring).

## Resources

| Resource | Group | Rate |
| --- | --- | --- |
| BCR TI |  |  |
| BCR QA |  |  |
| BCR usuario |  |  |
| Stephanie Barahona |  | 20 |
| Gabriela Dittel |  | 30 |
| Arnoldo Martinelli | Consultoría | 20 |
| Alexander Cruz |  | 25 |

## Schedule

| ID | WBS | Task | Type | Duration | Start | Finish | Predecessors | Total slack | Constraint | Resources | Work | Cost |
| --- | --- | --- | --- | --- | --- | --- | --- | --- | --- | --- | --- | --- |
| 1 | 1 | **SIGANEM Bloque 01 - Fase 02 - Sprint 6** |  | 25.17d | 2016-08-29 09:00 | 2016-10-04 10:21 |  | 0d |  |  | 241.6h | 3,258.5 |
| 2 | 1.1 | Preparación de Propuesta y Plan de Trabajo |  | 5h | 2016-08-29 09:00 | 2016-08-29 15:00 |  | 0d | start no earlier than 2016-08-29 09:00 | Alexander Cruz [50%]; Arnoldo Martinelli [50%]; Gabriela Dittel; Stephanie Barahona [90%] | 14.5h | 352.5 |
| 3 | 1.2 | **Análisis Requisitos del Sistema** |  | 0.25d | 2016-09-02 15:00 | 2016-09-02 17:00 | 2FS+4d | 0d |  |  | 6h | 130 |
| 4 | 1.2.1 | Validar y Evaluar Detalle los Requisitos del Sistema (RFP) |  | 2h | 2016-09-02 15:00 | 2016-09-02 17:00 |  | 0d |  | Alexander Cruz; Arnoldo Martinelli; Stephanie Barahona | 6h | 130 |
| 5 | 1.3 | **Diseño** |  | 4.73d | 2016-09-08 08:00 | 2016-09-14 14:51 | 3FS+3d | 0d |  |  | 54.4h | 620 |
| 6 | 1.3.1 | **Definición Propuesta Diseño** |  | 1.98d | 2016-09-08 08:00 | 2016-09-09 16:51 |  | 0d |  |  | 18.4h | 370 |
| 7 | 1.3.1.1 | **Diseño del requerimiento funcional** |  | 1.48d | 2016-09-08 08:00 | 2016-09-09 11:51 |  | 0d |  |  | 16h | 320 |
| 8 | 1.3.1.1.1 | Ajustes: Cálculo Monto Tasación, Cálculo Porcentaje Aceptación, Cálculo Porcentaje Responsabilidad |  | 0.74d | 2016-09-08 08:00 | 2016-09-08 14:55 |  | 0d |  | Arnoldo Martinelli; Stephanie Barahona [35%] | 8h | 160 |
| 9 | 1.3.1.1.2 | Preparación de fórmula en Excel |  | 0.74d | 2016-09-08 14:55 | 2016-09-09 11:51 | 8 | 0d |  | Arnoldo Martinelli; Stephanie Barahona [35%] | 8h | 160 |
| 10 | 1.3.1.2 | **Definición diseño técnico** |  | 0.5d | 2016-09-09 11:51 | 2016-09-09 16:51 | 7 | 0d |  |  | 2.4h | 50 |
| 11 | 1.3.1.2.1 | Ajustes: Cálculo Monto Tasación, Cálculo Porcentaje Aceptación, Cálculo Porcentaje Responsabilidad |  | 0.5d | 2016-09-09 11:51 | 2016-09-09 16:51 |  | 0d |  | Alexander Cruz [10%]; Arnoldo Martinelli | 2.4h | 50 |
| 12 | 1.3.1.3 | Entrega documento diseño funcional y técnico | milestone | 0d | 2016-09-09 16:51 | 2016-09-09 16:51 | 7, 10 | 0d |  | Arnoldo Martinelli |  |  |
| 13 | 1.3.2 | Revisión de propuesta con área de negocio |  | 1d | 2016-09-09 16:51 | 2016-09-12 16:51 | 12 | 0d |  | Arnoldo Martinelli [50%]; BCR TI; BCR usuario | 20h | 80 |
| 14 | 1.3.3 | Ajustes documento de diseño funcional y técnico |  | 0.5d | 2016-09-12 16:51 | 2016-09-13 11:51 | 13 | 0d |  | Arnoldo Martinelli | 4h | 80 |
| 15 | 1.3.4 | Entrega documento diseño | milestone | 0d | 2016-09-13 11:51 | 2016-09-13 11:51 | 14 | 0d |  | Arnoldo Martinelli |  |  |
| 16 | 1.3.5 | Revisión final Area Negocio |  | 0.5d | 2016-09-13 11:51 | 2016-09-13 16:51 | 15 | 0d |  | BCR usuario | 4h |  |
| 17 | 1.3.6 | Revisión final TI |  | 0.5d | 2016-09-13 16:51 | 2016-09-14 11:51 | 16 | 0d |  | BCR TI | 4h |  |
| 18 | 1.3.7 | Ajustes por revisión final |  | 0.25d | 2016-09-14 11:51 | 2016-09-14 14:51 | 17 | 0d |  | Alexander Cruz; Arnoldo Martinelli | 4h | 90 |
| 19 | 1.3.8 | Entrega documento diseño final | milestone | 0d | 2016-09-14 14:51 | 2016-09-14 14:51 | 18 | 0d |  | Arnoldo Martinelli |  |  |
| 20 | 1.3.9 | Aprobación Diseño Funcional y Técnico | milestone | 0d | 2016-09-14 14:51 | 2016-09-14 14:51 | 19 | 0d |  | BCR TI; BCR usuario |  |  |
| 21 | 1.4 | **Desarrollo** |  | 1.5d | 2016-09-16 14:51 | 2016-09-20 09:51 | 5FS+1d | 0d |  |  | 18h | 390 |
| 22 | 1.4.1 | Ajuste en Cálculo Monto Tasación |  | 0.75d | 2016-09-16 14:51 | 2016-09-19 11:51 |  | 0d |  | Alexander Cruz | 6h | 150 |
| 23 | 1.4.2 | Ajuste en Cálculo Porcentaje Aceptación |  | 0.75d | 2016-09-16 14:51 | 2016-09-19 11:51 |  | 0.75d |  | Arnoldo Martinelli | 6h | 120 |
| 24 | 1.4.3 | Ajuste en Cálculo Porcentaje Responsabilidad |  | 0.75d | 2016-09-19 11:51 | 2016-09-20 09:51 | 22 | 0d |  | Arnoldo Martinelli | 6h | 120 |

| ID | WBS | Task | Duration | Start | Finish | Predecessors | Total slack | Resources | Work | Cost |
| --- | --- | --- | --- | --- | --- | --- | --- | --- | --- | --- |
| 25 | 1.5 | **Pruebas Funcionales** | 7.25d | 2016-09-13 11:51 | 2016-09-23 14:51 |  | 0d |  | 40h | 800 |
| 26 | 1.5.1 | Generación de Scripts de Pruebas | 1.5d | 2016-09-13 11:51 | 2016-09-14 16:51 | 14 | 2.25d | Arnoldo Martinelli | 12h | 240 |
| 27 | 1.5.2 | **Iteración 1** | 3d | 2016-09-20 09:51 | 2016-09-23 09:51 |  | 0d |  | 24h | 480 |
| 28 | 1.5.2.1 | Aplicación de Pruebas | 2.5d | 2016-09-20 09:51 | 2016-09-22 14:51 | 21, 26 | 0d | Arnoldo Martinelli | 20h | 400 |
| 29 | 1.5.2.2 | Ajustes sobre PNS | 0.5d | 2016-09-22 14:51 | 2016-09-23 09:51 | 28 | 0d | Arnoldo Martinelli | 4h | 80 |
| 30 | 1.5.3 | **Iteración 2** | 0.5d | 2016-09-23 09:51 | 2016-09-23 14:51 | 27 | 0d |  | 4h | 80 |
| 31 | 1.5.3.1 | Aplicación de Pruebas | 0.5d | 2016-09-23 09:51 | 2016-09-23 14:51 |  | 0d | Arnoldo Martinelli | 4h | 80 |
| 32 | 1.6 | **Pruebas de QA** | 8.56d | 2016-09-16 09:51 | 2016-09-28 15:21 | 21FS-2d | 0d |  | 56.5h | 160 |
| 33 | 1.6.1 | Generación de Scripts de Pruebas | 4d | 2016-09-16 09:51 | 2016-09-22 09:51 |  | 4.56d | BCR QA | 32h |  |
| 34 | 1.6.2 | **Iteración 1** | 2.75d | 2016-09-23 14:51 | 2016-09-28 11:51 | 25 | 0d |  | 22h | 120 |
| 35 | 1.6.2.1 | Generacion de Pase | 2h | 2016-09-23 14:51 | 2016-09-23 16:51 |  | 0d | Arnoldo Martinelli | 2h | 40 |
| 36 | 1.6.2.2 | Aplicación de Pruebas | 2d | 2016-09-23 16:51 | 2016-09-27 16:51 | 35 | 0d | BCR QA | 16h |  |
| 37 | 1.6.2.3 | Ajustes sobre PNS | 0.5d | 2016-09-27 16:51 | 2016-09-28 11:51 | 36 | 0d | Arnoldo Martinelli | 4h | 80 |
| 38 | 1.6.3 | **Iteración 2** | 0.31d | 2016-09-28 11:51 | 2016-09-28 15:21 | 34 | 0d |  | 2.5h | 40 |
| 39 | 1.6.3.1 | Generacion de Pase | 2h | 2016-09-28 11:51 | 2016-09-28 14:51 |  | 0d | Arnoldo Martinelli | 2h | 40 |
| 40 | 1.6.3.2 | Aplicación de Pruebas | 0.5h | 2016-09-28 14:51 | 2016-09-28 15:21 | 39 | 0d | BCR QA | 0.5h |  |
| 41 | 1.7 | **Pruebas de Usuario** | 3.25d | 2016-09-28 15:21 | 2016-10-04 08:21 | 32 | 0d |  | 26h | 120 |
| 42 | 1.7.1 | **Ejecución de Pruebas** | 3.25d | 2016-09-28 15:21 | 2016-10-04 08:21 |  | 0d |  | 26h | 120 |
| 43 | 1.7.1.1 | **Iteración 1** | 2.5d | 2016-09-28 15:21 | 2016-10-03 10:21 |  | 0d |  | 20h | 80 |
| 44 | 1.7.1.1.1 | Aplicación de Pruebas | 2d | 2016-09-28 15:21 | 2016-09-30 15:21 |  | 0d | BCR usuario | 16h |  |
| 45 | 1.7.1.1.2 | Ajustes/Pruebas | 0.5d | 2016-09-30 15:21 | 2016-10-03 10:21 | 44 | 0d | Arnoldo Martinelli | 4h | 80 |
| 46 | 1.7.1.2 | **Iteración 2** | 0.75d | 2016-10-03 10:21 | 2016-10-04 08:21 | 43 | 0d |  | 6h | 40 |
| 47 | 1.7.1.2.1 | Pase a pruebas | 2h | 2016-10-03 10:21 | 2016-10-03 13:21 |  | 0d | Arnoldo Martinelli | 2h | 40 |
| 48 | 1.7.1.2.2 | Ejecución de pruebas y documentación | 0.5d | 2016-10-03 13:21 | 2016-10-04 08:21 | 47 | 0d | BCR usuario | 4h |  |

| ID | WBS | Task | Type | Duration | Start | Finish | Predecessors | Total slack | Resources | Work | Cost |
| --- | --- | --- | --- | --- | --- | --- | --- | --- | --- | --- | --- |
| 49 | 1.8 | **Documentación** |  | 0.5d | 2016-10-03 13:21 | 2016-10-04 08:21 | 47 | 0d |  | 4h | 80 |
| 50 | 1.8.1 | Manual Técnico |  | 0.5d | 2016-10-03 13:21 | 2016-10-04 08:21 |  | 0d | Arnoldo Martinelli | 4h | 80 |
| 51 | 1.9 | **Cierre** |  | 0.25d | 2016-10-04 08:21 | 2016-10-04 10:21 | 41, 49 | 0d |  | 3.2h | 96 |
| 52 | 1.9.1 | Preparación de Control Horas e Informe |  | 2h | 2016-10-04 08:21 | 2016-10-04 10:21 |  | 0d | Gabriela Dittel | 2h | 60 |
| 53 | 1.9.2 | Revisión de Documentos y Cierre |  | 1.2h | 2016-10-04 08:21 | 2016-10-04 09:33 |  | 0.1d | Gabriela Dittel | 1.2h | 36 |
| 55 | 1.10 | **Administración de Proyecto** |  | 22.88d | 2016-08-31 09:00 | 2016-10-03 19:00 |  | 0d |  | 19h | 510 |
| 56 | 1.10.1 | **Labores de gestión (atención cliente, correos, controles de cambio)** |  | 20.12d | 2016-09-05 09:00 | 2016-10-03 19:00 |  |  |  | 9h | 270 |
| 57 | 1.10.1.1 | Labores de gestión (atención cliente, correos, controles de cambio) 1 | manual | 1h | 2016-09-05 09:00 | 2016-09-05 10:00 |  |  | Gabriela Dittel | 1h | 30 |
| 58 | 1.10.1.2 | Labores de gestión (atención cliente, correos, controles de cambio) 2 | manual | 1h | 2016-09-08 09:00 | 2016-09-08 10:00 |  |  | Gabriela Dittel | 1h | 30 |
| 59 | 1.10.1.3 | Labores de gestión (atención cliente, correos, controles de cambio) 3 | manual | 1h | 2016-09-12 09:00 | 2016-09-12 10:00 |  |  | Gabriela Dittel | 1h | 30 |
| 60 | 1.10.1.4 | Labores de gestión (atención cliente, correos, controles de cambio) 4 | manual | 1h | 2016-09-16 09:00 | 2016-09-16 10:00 |  |  | Gabriela Dittel | 1h | 30 |
| 61 | 1.10.1.5 | Labores de gestión (atención cliente, correos, controles de cambio) 5 | manual | 1h | 2016-09-19 09:00 | 2016-09-19 10:00 |  |  | Gabriela Dittel | 1h | 30 |
| 62 | 1.10.1.6 | Labores de gestión (atención cliente, correos, controles de cambio) 6 | manual | 1h | 2016-09-22 09:00 | 2016-09-22 10:00 |  |  | Gabriela Dittel | 1h | 30 |
| 63 | 1.10.1.7 | Labores de gestión (atención cliente, correos, controles de cambio) 7 | manual | 1h | 2016-09-26 09:00 | 2016-09-26 10:00 |  |  | Gabriela Dittel | 1h | 30 |
| 64 | 1.10.1.8 | Labores de gestión (atención cliente, correos, controles de cambio) 8 | manual | 1h | 2016-09-29 09:00 | 2016-09-29 10:00 |  |  | Gabriela Dittel | 1h | 30 |
| 65 | 1.10.1.9 | Labores de gestión (atención cliente, correos, controles de cambio) 9 | manual | 1h | 2016-10-03 09:00 | 2016-10-03 10:00 |  |  | Gabriela Dittel | 1h | 30 |
| 66 | 1.10.2 | **Actualización cronograma** |  | 10.12d | 2016-09-07 09:00 | 2016-09-21 19:00 |  |  |  | 2h | 60 |
| 67 | 1.10.2.1 | Actualización cronograma 1 | manual | 1h | 2016-09-07 09:00 | 2016-09-07 10:00 |  |  | Gabriela Dittel | 1h | 30 |
| 68 | 1.10.2.2 | Actualización cronograma 2 | manual | 1h | 2016-09-21 09:00 | 2016-09-21 10:00 |  |  | Gabriela Dittel | 1h | 30 |
| 69 | 1.10.3 | **Preparación informe de avance** |  | 10.12d | 2016-09-07 09:00 | 2016-09-21 19:00 |  |  |  | 2h | 60 |
| 70 | 1.10.3.1 | Preparación informe de avance 1 | manual | 1h | 2016-09-07 09:00 | 2016-09-07 10:00 |  |  | Gabriela Dittel | 1h | 30 |
| 71 | 1.10.3.2 | Preparación informe de avance 2 | manual | 1h | 2016-09-21 09:00 | 2016-09-21 10:00 |  |  | Gabriela Dittel | 1h | 30 |
| 72 | 1.10.4 | **Actualización control de horas** |  | 20.12d | 2016-08-31 09:00 | 2016-09-28 19:00 |  |  |  | 3h | 90 |
| 73 | 1.10.4.1 | Actualización control de horas 1 | manual | 1h | 2016-08-31 09:00 | 2016-08-31 10:00 |  |  | Gabriela Dittel | 1h | 30 |
| 74 | 1.10.4.2 | Actualización control de horas 2 | manual | 1h | 2016-09-14 09:00 | 2016-09-14 10:00 |  |  | Gabriela Dittel | 1h | 30 |
| 75 | 1.10.4.3 | Actualización control de horas 3 | manual | 1h | 2016-09-28 09:00 | 2016-09-28 10:00 |  |  | Gabriela Dittel | 1h | 30 |

| ID | WBS | Task | Type | Duration | Start | Finish | Resources | Work | Cost |
| --- | --- | --- | --- | --- | --- | --- | --- | --- | --- |
| 76 | 1.10.5 | **Sesión Seguimiento Proyecto** |  | 1.12d | 2016-09-29 09:00 | 2016-09-29 19:00 |  | 3h | 30 |
| 77 | 1.10.5.1 | Sesión Seguimiento Proyecto 1 | manual | 1h | 2016-09-29 09:00 | 2016-09-29 10:00 | BCR TI; BCR usuario; Gabriela Dittel | 3h | 30 |
