# Plan de pruesta a produccion SIGANEM

Schedule from MS Project, 2016-03-29 to 2016-06-24, A marks actual dates.
Toshiba

## Calendars

- Estándar: Mon-Fri 09:00-13:00, 15:00-19:00; Sat-Sun off. Exceptions (off unless hours are given): 2016-05-27 17:00-23:59 (Fuera de horario), 2016-05-28 09:00-13:00, 15:00-19:00 (Habilitado).

## Resources

| Resource |
| --- |
| Alexander Cruz |
| Yamileth Lizano |
| Jonathan Avendaño |
| Melissa Martinez |
| Alexander Méndez |
| Greivin Jiménez |
| Unidad Base de Datos |
| Unidad de Producción |
| Usuario BCR |
| Oscar Arias |

## Schedule

| ID | WBS | Task | Type | Duration | Start | Finish | Predecessors | Complete | Remaining | Total slack | Free slack | Resources | Work | Actual work |
| --- | --- | --- | --- | --- | --- | --- | --- | --- | --- | --- | --- | --- | --- | --- |
| 1 | 1 | **SIGANEM: PREPARACION DE PASE GRUPO MAS** |  | 30d | 2016-03-29 09:00 A | 2016-05-09 19:00 |  | 6% | 28.09d | 34.31d |  |  | 400h | 24h |
| 2 | 1.1 | Preparación de todas las tablas con los datos para cargar |  | 2d | 2016-03-29 09:00 A | 2016-03-30 19:00 A |  | 100% |  |  |  | Melissa Martinez | 16h | 16h |
| 3 | 1.2 | Preparación de los compenentes de la aplicación |  | 2d | 2016-03-29 09:00 | 2016-03-30 19:00 |  |  |  | 52.31d |  | Jonathan Avendaño; Alexander Cruz | 32h |  |
| 4 | 1.3 | Preparación de Base de Datos limpia |  | 1d | 2016-03-31 09:00 A | 2016-03-31 19:00 A | 3 | 100% |  |  |  | Alexander Cruz | 8h | 8h |
| 5 | 1.4 | Preparación de scripts de llenado de todos los catálogos con información correcta |  | 2d | 2016-04-01 09:00 | 2016-04-04 19:00 | 4 |  |  | 4.15d | 0d | Alexander Cruz | 16h |  |
| 6 | 1.5 | Entrega: Scripts de llenado | milestone | 0d | 2016-04-04 19:00 | 2016-04-04 19:00 | 5 |  |  | 49.31d |  | Alexander Cruz |  |  |
| 7 | 1.6 | Ejecución de laboratorio en ambiente pre-pase a prooducción y generación de reportes de laboratorio |  | 1d | 2016-04-05 09:00 | 2016-04-05 19:00 | 5 |  |  | 4.15d | 0d | Alexander Cruz | 8h |  |
| 8 | 1.7 | Modificación de parametros | manual | 0.5d | 2016-04-06 09:00 | 2016-04-06 13:00 | 7 |  |  |  |  | Melissa Martinez | 4h |  |
| 9 | 1.8 | **Primera Iteración** |  | 5.5d | 2016-04-06 09:00 | 2016-04-13 13:00 |  |  |  | 0d |  |  | 44h |  |
| 10 | 1.8.1 | Ejecución de procesos |  | 0.5d | 2016-04-06 09:00 | 2016-04-06 13:00 | 7 |  |  | 4.15d | 0d | Alexander Cruz | 4h |  |
| 11 | 1.8.2 | Ejecución de reportes |  | 0.5d | 2016-04-06 15:00 | 2016-04-06 19:00 | 10 |  |  | 4.15d | 0d | Alexander Cruz | 4h |  |
| 12 | 1.8.3 | Validación de reportes |  | 0.5d | 2016-04-07 09:00 | 2016-04-07 13:00 | 11 |  |  | 24.31d | 0d | Greivin Jiménez | 4h |  |
| 13 | 1.8.4 | Pruebas SEGUI |  | 3d | 2016-04-07 15:00 | 2016-04-12 13:00 | 12 |  |  | 24.31d | 0d | Greivin Jiménez | 24h |  |
| 14 | 1.8.5 | Ajustes a reportes |  | 1d | 2016-04-12 15:00 | 2016-04-13 13:00 | 13 |  |  | 24.31d |  | Alexander Cruz | 8h |  |
| 15 | 1.8.6 | Modificación de parametros | manual | 1d | 2016-04-06 09:00 | 2016-04-06 19:00 |  |  |  |  |  |  |  |  |
| 16 | 1.9 | **Segunda Iteración** |  | 4.5d | 2016-04-13 15:00 | 2016-04-19 19:00 | 9 |  |  | 34.31d | 0d |  | 36h |  |
| 17 | 1.9.1 | Ejecución de procesos |  | 0.5d | 2016-04-13 15:00 | 2016-04-13 19:00 |  |  |  | 24.31d | 0d | Alexander Cruz | 4h |  |
| 18 | 1.9.2 | Ejecución de reportes |  | 0.5d | 2016-04-14 09:00 | 2016-04-14 13:00 | 17 |  |  | 24.31d | 0d | Alexander Cruz | 4h |  |
| 19 | 1.9.3 | Validación de reportes |  | 0.5d | 2016-04-14 15:00 | 2016-04-14 19:00 | 18 |  |  | 24.31d | 0d | Greivin Jiménez | 4h |  |
| 20 | 1.9.4 | Pruebas SEGUI |  | 3d | 2016-04-15 09:00 | 2016-04-19 19:00 | 19 |  |  | 33.31d |  | Greivin Jiménez | 24h |  |
| 21 | 1.10 | **Primera Iteración** |  | 4d | 2016-04-20 09:00 | 2016-04-25 19:00 | 16 |  |  | 43.31d | 0d |  | 32h |  |
| 22 | 1.10.1 | Pruebas Integrales de migración |  | 3d | 2016-04-20 09:00 | 2016-04-22 19:00 |  |  |  | 33.31d | 0d | Greivin Jiménez | 24h |  |
| 23 | 1.10.2 | Ajustes |  | 1d | 2016-04-25 09:00 | 2016-04-25 19:00 | 22 |  |  | 43.31d |  | Alexander Cruz | 8h |  |
| 24 | 1.11 | **Segunda Iteración** |  | 1d | 2016-04-26 09:00 | 2016-04-26 19:00 |  |  |  | 43.31d |  |  | 8h |  |
| 25 | 1.11.1 | Pruebas Integrales de migración |  | 1d | 2016-04-26 09:00 | 2016-04-26 19:00 | 21 |  |  | 43.31d |  | Greivin Jiménez | 8h |  |

Notes:
- 5: Aca deben dejar una copia lista para ejecutar esto en Produccion el día del pase
- 7: Recuerden que debe copiar las tablas del databrigde replicadas directo de la base de datos garantiasproduccion y solamente para estas pruebas, el día del pase lo hacemos directo a db.
- 10: recuerden tablas de databridge tomadas de garantias

| ID | WBS | Task | Type | Duration | Start | Finish | Predecessors | Complete | Remaining | Total slack | Free slack | Resources | Work | Actual work |
| --- | --- | --- | --- | --- | --- | --- | --- | --- | --- | --- | --- | --- | --- | --- |
| 26 | 1.12 | **Primera Iteración** |  | 12d | 2016-04-15 09:00 | 2016-05-02 19:00 | 19 |  |  | 34.31d | 0d |  | 112h |  |
| 27 | 1.12.1 | Pruebas Integrales de usuario |  | 10d | 2016-04-15 09:00 | 2016-04-28 19:00 |  |  |  | 24.31d | 0d | Melissa Martinez | 80h |  |
| 28 | 1.12.2 | Ajustes |  | 2d | 2016-04-29 09:00 | 2016-05-02 19:00 | 27 |  |  | 34.31d |  | Alexander Cruz; Jonathan Avendaño | 32h |  |
| 29 | 1.13 | **Segunda Iteración** |  | 5d | 2016-05-03 09:00 | 2016-05-09 19:00 | 26 |  |  | 34.31d |  |  | 40h |  |
| 30 | 1.13.1 | Pruebas Integrales de usuario |  | 5d | 2016-05-03 09:00 | 2016-05-09 19:00 |  |  |  | 34.31d |  | Melissa Martinez | 40h |  |
| 31 | 1.14 | Actualizar Diccionario de Datos |  | 1d | 2016-04-07 09:00 | 2016-04-07 19:00 | 11 |  |  | 4.15d | 0d | Oscar Arias | 8h |  |
| 32 | 1.15 | Actualizar Manual Técnico |  | 1d | 2016-04-08 09:00 | 2016-04-08 19:00 | 31 |  |  | 32.19d | 0d | Oscar Arias | 8h |  |
| 33 | 1.16 | Documentación del pase |  | 2d | 2016-04-11 09:00 | 2016-04-12 19:00 | 32 |  |  | 40.31d | 0d | Oscar Arias | 16h |  |
| 34 | 1.17 | Recuperación de Continuidad actualizado |  | 0.5d | 2016-04-08 09:00 | 2016-04-08 13:00 | 31 |  |  | 4.15d | 0d | Alexander Cruz | 4h |  |
| 35 | 1.18 | Preparación de guía de validación de resultados del pase |  | 1d | 2016-04-08 15:00 | 2016-04-11 13:00 | 34 |  |  | 4.15d | 0d | Alexander Cruz | 8h |  |
| 36 | 2 | **SIGNAMEM: PRERACION PASE BCR Y EJECUCIÓN** |  | 64.31d | 2016-03-29 09:00 A | 2016-06-24 12:31 | 35 | 22% | 50.3d | 0d |  |  | 284.5h | 88h |
| 37 | 2.1 | Llenar formulario de la CMDB | manual | 9d | 2016-03-29 09:00 A | 2016-04-08 19:00 A |  | 100% |  |  |  | Yamileth Lizano | 72h | 72h |
| 38 | 2.2 | Crear tiquete CMDB | manual | 1d | 2016-04-11 09:00 A | 2016-04-11 19:00 A | 37 | 100% |  |  |  | Yamileth Lizano | 8h | 8h |
| 39 | 2.3 | Solicitud de revisión de manual técnico (FORMULARIO 38-OD) | manual | 1d | 2016-04-08 09:00 A | 2016-04-08 19:00 A | 32 | 100% |  |  |  | Yamileth Lizano | 8h | 8h |
| 40 | 2.4 | Revisión de manual técnico | manual | 10d | 2016-04-11 09:00 | 2016-04-22 19:00 | 39 |  |  |  |  | Yamileth Lizano | 80h |  |
| 41 | 2.5 | Versionar fuentes | manual | 2d | 2016-04-28 09:00 | 2016-04-29 19:00 |  |  |  |  |  | Yamileth Lizano | 16h |  |
| 42 | 2.6 | Revisar documentación completa del pase |  | 1d | 2016-04-13 09:00 | 2016-04-13 19:00 | 33 |  |  | 40.31d | 0d | Yamileth Lizano | 8h |  |
| 43 | 2.7 | Crear RFC |  | 1d | 2016-04-14 09:00 | 2016-04-14 19:00 | 42 |  |  | 40.31d | 0d | Yamileth Lizano | 8h |  |
| 44 | 2.8 | Elaborar presentación GAC |  | 1d | 2016-04-15 09:00 | 2016-04-15 19:00 | 43 |  |  | 40.31d |  | Yamileth Lizano | 8h |  |
| 45 | 2.9 | Solicitar cita en el GAC |  | 1d | 2016-04-15 09:00 | 2016-04-15 19:00 | 43 |  |  | 40.31d |  | Yamileth Lizano | 8h |  |
| 46 | 2.10 | Presentación del GAC |  | 1h | 2016-04-27 09:00 | 2016-04-27 10:00 | 40FS+2d |  |  | 43.19d |  | Yamileth Lizano; Alexander Méndez | 2h |  |
| 47 | 2.11 | **Fase 1 del pase** |  | 3.5d | 2016-05-23 09:00 | 2016-05-26 13:00 |  |  |  | 0d |  |  | 35.5h |  |
| 48 | 2.11.1 | Creación de Base de datos, objetos, usuarios y permisos | manual | 2h | 2016-05-23 09:00 | 2016-05-23 11:00 |  |  |  |  |  | Alexander Cruz; Unidad Base de Datos | 4h |  |
| 49 | 2.11.2 | Carga de catálogos, usuarios y roles |  | 2h | 2016-05-23 11:00 | 2016-05-23 13:00 | 48 |  |  | 0.5d | 0d | Alexander Cruz; Unidad Base de Datos | 4h |  |
| 50 | 2.11.3 | Instalación de proyectos en Integration services |  | 1.5h | 2016-05-24 15:00 | 2016-05-24 16:30 | 49FS+8h |  |  | 0.5d | 0d | Alexander Cruz; Unidad Base de Datos | 3h |  |
| 51 | 2.11.4 | Configuración del mirrow | manual | 1.5h | 2016-05-24 16:30 | 2016-05-24 18:00 | 50 |  |  |  |  | Alexander Cruz; Unidad Base de Datos | 3h |  |
| 52 | 2.11.5 | Validación de permisos |  | 1h | 2016-05-24 16:30 | 2016-05-24 17:30 | 50 |  |  | 23.5d |  | Alexander Cruz; Unidad Base de Datos | 2h |  |
| 53 | 2.11.6 | Instalación de Aplicación |  | 2h | 2016-05-25 16:30 | 2016-05-25 18:30 | 50FS+8h |  |  | 0.5d | 0d | Jonathan Avendaño; Unidad de Producción; Yamileth Lizano | 6h |  |
| 54 | 2.11.7 | Validación de permisos |  | 1h | 2016-05-25 18:30 | 2016-05-26 09:30 | 53 |  |  | 0.5d | 0d | Jonathan Avendaño; Unidad de Producción; Yamileth Lizano | 3h |  |
| 55 | 2.11.8 | Instalación de Presentación |  | 2h | 2016-05-26 09:30 | 2016-05-26 11:30 | 54 |  |  | 0.5d | 0d | Jonathan Avendaño; Unidad de Producción; Yamileth Lizano | 6h |  |
| 56 | 2.11.9 | Validación de permisos |  | 1h | 2016-05-26 11:30 | 2016-05-26 12:30 | 55 |  |  | 0.5d | 0d | Jonathan Avendaño; Unidad de Producción; Yamileth Lizano | 3h |  |
| 57 | 2.11.10 | Instalación de servicio |  | 0.5h | 2016-05-26 12:30 | 2016-05-26 13:00 | 56 |  |  | 0.5d |  | Jonathan Avendaño; Unidad de Producción; Yamileth Lizano | 1.5h |  |

Notes:
- 33: (formulario 261-OD), uno para Migración y otro para la parte aplicativa, instalación de paquetes, configuraciones, etc

| ID | WBS | Task | Type | Duration | Start | Finish | Predecessors | Total slack | Resources | Work |
| --- | --- | --- | --- | --- | --- | --- | --- | --- | --- | --- |
| 58 | 2.12 | **Fase 2 del pase** |  | 0.31d | 2016-05-27 09:00 | 2016-05-27 19:30 | 57 | 0d |  | 7h |
| 59 | 2.12.1 | Migracion valores | manual | 0.5h | 2016-05-27 09:00 | 2016-05-27 09:30 |  |  | Alexander Cruz; Unidad Base de Datos | 1h |
| 60 | 2.12.2 | Validación de datos |  | 0.5h | 2016-05-27 17:00 | 2016-05-27 17:30 | 59 | 21.25d | Greivin Jiménez | 0.5h |
| 61 | 2.12.3 | Migración fiduciaria |  | 0.5h | 2016-05-27 17:00 | 2016-05-27 17:30 | 59 | 0d | Alexander Cruz; Unidad Base de Datos | 1h |
| 62 | 2.12.4 | Validacion de datos |  | 0.5h | 2016-05-27 17:30 | 2016-05-27 18:00 | 61 | 21.19d | Greivin Jiménez | 0.5h |
| 63 | 2.12.5 | Migración reales |  | 0.5h | 2016-05-27 17:30 | 2016-05-27 18:00 | 61 | 0d | Alexander Cruz; Unidad Base de Datos | 1h |
| 64 | 2.12.6 | Validación de datos |  | 0.5h | 2016-05-27 18:00 | 2016-05-27 18:30 | 63 | 21.12d | Greivin Jiménez | 0.5h |
| 65 | 2.12.7 | Migración de indicador de inscripción |  | 0.5h | 2016-05-27 18:00 | 2016-05-27 18:30 | 63 | 0d | Alexander Cruz; Unidad Base de Datos | 1h |
| 66 | 2.12.8 | Migración garantia operación |  | 0.5h | 2016-05-27 18:30 | 2016-05-27 19:00 | 65 | 0d | Alexander Cruz; Unidad Base de Datos | 1h |
| 67 | 2.12.9 | Validación de datos |  | 0.5h | 2016-05-27 19:00 | 2016-05-27 19:30 | 66 | 0d | Greivin Jiménez | 0.5h |
| 68 | 2.13 | Validación de pase |  | 8h | 2016-05-27 19:30 | 2016-05-28 12:31 | 67 | 0d | Alexander Méndez; Greivin Jiménez; Melissa Martinez | 24h |
| 69 | 2.14 | Estabilización |  | 20d | 2016-05-28 12:31 | 2016-06-24 12:31 | 68 | 0d |  |  |
